# caTRIP_Project_Plan

How a schedule from MS Project changed from version to version. A marks actual dates.

## Version 1 (saved 2006-05-31)

Note of the change: initial commit - merged from catrip_duke.mpp and caTRIP-SemanticBits-05092006.mpp

| ID | WBS | Task | Duration | Start | Finish | Predecessors | Total float | Constraint |
| --- | --- | --- | --- | --- | --- | --- | --- | --- |
| 1 | 1 | **Phase I** | 135d? | 2006-05-01 | 2006-11-03 |  | 0d |  |
| 2 | 1.1 | **Inception** | 25d | 2006-05-01 | 2006-06-02 |  | 0d |  |
| 3 |  | Install MS Project Server | 25d | 2006-05-01 | 2006-06-02 |  | 0d |  |
| 4 |  | Draft project management plan | 25d | 2006-05-01 | 2006-06-02 |  | 0d |  |
| 5 |  | Develop phase and iteration plan | 10d | 2006-05-01 | 2006-05-12 |  | 30d | finish no earlier than 2006-05-12 |
| 6 |  | Draft communications plan | 25d | 2006-05-01 | 2006-06-02 |  | 0d |  |
| 7 |  | Draft risk management matrix | 25d | 2006-05-01 | 2006-06-02 |  | 0d |  |
| 8 |  | Develop scope and vision document | 12d | 2006-05-11 | 2006-05-26 |  | 20d | finish no earlier than 2006-05-26 |
| 9 |  | Draft test plan | 25d | 2006-05-01 | 2006-06-02 |  | 0d |  |
| 10 |  | Setup GForge | 10d | 2006-05-01 | 2006-05-12 |  | 20d |  |
| 11 |  | Setup development environment | 10d | 2006-05-15 | 2006-05-26 | 10 | 20d |  |
| 12 |  | Define initial problem scenerios | 25d | 2006-05-01 | 2006-06-02 |  | 0d |  |
| 13 |  | Define problem scenarios | 2d | 2006-05-24 | 2006-05-25 |  | 21d | finish no earlier than 2006-05-25 |
| 14 |  | Define initial scientific use cases | 20d | 2006-05-01 | 2006-05-26 |  | 20d |  |
| 15 |  | Define initial system use cases | 20d | 2006-05-01 | 2006-05-26 |  | 20d |  |
| 16 |  | Define initial datasets | 20d | 2006-05-01 | 2006-05-26 |  | 20d |  |
| 17 | 1.1.15 | **Setup testbed** | 11d | 2006-05-01 | 2006-05-15 |  | 29d |  |
| 18 |  | Purchase testbed | 10d | 2006-05-01 | 2006-05-12 |  | 64d |  |
| 19 |  | Add testbed to backup cycle | 1d | 2006-05-15 | 2006-05-15 | 18 | 64d |  |
| 20 |  | Image testbed after basic environment is set up | 1d | 2006-05-15 | 2006-05-15 | 18 | 64d |  |
| 21 | 1.2 | **Elaboration** | 60d? | 2006-06-05 | 2006-08-25 | 2 | 0d |  |
| 22 | 1.2.1 | **Iteration 1** | 30d? | 2006-06-05 | 2006-07-14 |  | 0d |  |
| 23 | 1.2.1.1 | **Draft use case document** | 30d? | 2006-06-05 | 2006-07-14 |  | 0d |  |
| 24 |  | Finalize scientific use cases | 30d? | 2006-06-05 | 2006-07-14 |  | 0d | finish no earlier than 2006-07-07 |
| 25 |  | Finalize system use cases | 30d? | 2006-06-05 | 2006-07-14 |  | 0d | finish no earlier than 2006-07-07 |
| 26 |  | Draft use cases | 8d | 2006-06-05 | 2006-06-14 |  | 47d | finish no earlier than 2006-06-01 |
| 27 | 1.2.1.2 | **Draft requirements and specifications document** | 20d | 2006-06-05 | 2006-06-30 |  | 10d |  |
| 28 |  | Translate use cases into requirements | 10d | 2006-06-05 | 2006-06-16 |  | 30d |  |
| 29 |  | Create test traceability matrix | 5d | 2006-06-19 | 2006-06-23 | 28 | 30d |  |
| 30 |  | Draft architecture UML diagrams | 20d | 2006-06-05 | 2006-06-30 |  | 25d |  |
| 31 |  | Draft dataset document (draft) | 20d | 2006-06-05 | 2006-06-30 |  | 10d |  |
| 32 | 1.2.1.4 | **Dataset preparation** | 27d | 2006-06-05 | 2006-07-11 |  | 3d |  |
| 33 | 1.2.1.4.1 | **Dataset acquisition** | 7d | 2006-06-05 | 2006-06-13 |  | 18d |  |
| 34 |  | Determine available datasets | 1d | 2006-06-05 | 2006-06-05 |  | 18d | finish no earlier than 2006-05-25 |
| 35 |  | Match datasets to use cases | 1d | 2006-06-06 | 2006-06-06 | 34 | 18d |  |
| 36 |  | Fill out IRB forms | 5d | 2006-06-07 | 2006-06-13 | 35 | 18d |  |
| 37 | 1.2.1.4.2 | **MAW3** | 12.5d | 2006-06-14 | 2006-06-30 | 33 | 25.5d |  |
| 38 |  | Document CDE usage | 2.5d | 2006-06-14 | 2006-06-16 |  | 25.5d |  |
| 39 |  | Dataset deidentification | 5d | 2006-06-16 | 2006-06-23 | 38 | 25.5d |  |
| 40 |  | Expose database | 5d | 2006-06-23 | 2006-06-30 | 39 | 25.5d |  |
| 41 | 1.2.1.4.3 | **DSR** | 20d | 2006-06-14 | 2006-07-11 | 33 | 18d |  |
| 42 |  | CDE document | 5d | 2006-06-14 | 2006-06-20 |  | 18d |  |
| 43 |  | Dataset deidentification | 10d | 2006-06-21 | 2006-07-04 | 42 | 18d |  |
| 44 |  | Expose database | 5d | 2006-07-05 | 2006-07-11 | 43 | 18d |  |
| 45 | 1.2.1.5 | **Tool installation** | 25d | 2006-06-05 | 2006-07-07 |  | 5d |  |
| 46 |  | Install and configure caGrid 1.0 infrastructure | 5d | 2006-06-05 | 2006-06-09 |  | 70d | start no earlier than 2006-05-29 |
| 47 | 1.2.1.5.2 | **caTissue Core** | 25d | 2006-06-05 | 2006-07-07 |  | 20d |  |
| 48 |  | Document CDE extension | 5d | 2006-06-05 | 2006-06-09 |  | 50d |  |
| 49 |  | Extend model | 5d | 2006-06-12 | 2006-06-16 | 48 | 50d |  |
| 50 |  | Apply model to tool | 5d | 2006-06-19 | 2006-06-23 | 49 | 50d |  |
| 51 |  | Install services | 5d | 2006-06-26 | 2006-06-30 | 50 | 50d |  |
| 52 |  | Install tool | 5d | 2006-07-03 | 2006-07-07 | 51 | 50d |  |
| 53 | 1.2.1.5.3 | **CAE** | 25d | 2006-06-05 | 2006-07-07 |  | 20d |  |
| 54 |  | Document CDE extension | 5d | 2006-06-05 | 2006-06-09 |  | 50d |  |
| 55 |  | Extend model | 5d | 2006-06-12 | 2006-06-16 | 54 | 50d |  |
| 56 |  | Apply model to tool | 5d | 2006-06-19 | 2006-06-23 | 55 | 50d |  |
| 57 |  | Install services | 5d | 2006-06-26 | 2006-06-30 | 56 | 50d |  |
| 58 |  | Install tool | 5d | 2006-07-03 | 2006-07-07 | 57 | 50d |  |
| 59 | 1.2.1.5.4 | **caTIES** | 25d | 2006-06-05 | 2006-07-07 |  | 20d |  |
| 60 |  | Document CDE extension | 5d | 2006-06-05 | 2006-06-09 |  | 50d |  |
| 61 |  | Extend model | 5d | 2006-06-12 | 2006-06-16 | 60 | 50d |  |
| 62 |  | Apply model to tool | 5d | 2006-06-19 | 2006-06-23 | 61 | 50d |  |
| 63 |  | Install services | 5d | 2006-06-26 | 2006-06-30 | 62 | 50d |  |
| 64 |  | Install tool | 5d | 2006-07-03 | 2006-07-07 | 63 | 50d |  |
| 65 | 1.2.1.6 | **Develop API for non-caBIG systems** | 20d? | 2006-06-05 | 2006-06-30 |  | 10d |  |
| 66 |  | Develop UML domain model | 15d | 2006-06-05 | 2006-06-23 |  | 60d | start no earlier than 2006-06-05 |
| 67 |  | Perform O/R mapping using Hibernate | 15d? | 2006-06-05 | 2006-06-23 |  | 60d | start no earlier than 2006-06-05 |
| 68 |  | Perform semantic annotation | 15d? | 2006-06-05 | 2006-06-23 |  | 55d | start no earlier than 2006-06-05 |
| 69 |  | Generate API using caCORE SDK | 5d | 2006-06-26 | 2006-06-30 | 68 | 55d |  |
| 70 | 1.2.1.7 | **Design,develop and test distributed query engine architecture** | 30d? | 2006-06-05 | 2006-07-14 |  | 0d |  |

| ID | WBS | Task | Duration | Start | Finish | Predecessors | Total float | Constraint |
| --- | --- | --- | --- | --- | --- | --- | --- | --- |
| 71 |  | Finalize federated query schema | 5d | 2006-06-05 | 2006-06-09 |  | 70d | start no earlier than 2006-05-29 |
| 72 |  | Design distributed query engine - Create UML artifacts | 30d? | 2006-06-05 | 2006-07-14 |  | 0d | start no earlier than 2006-05-29 |
| 73 |  | Code and Test | 30d? | 2006-06-05 | 2006-07-14 |  | 0d | start no earlier than 2006-05-29 |
| 74 | 1.2.1.8 | **Design, develop and test core architecture for GUI** | 20d? | 2006-06-12 | 2006-07-07 |  | 5d |  |
| 75 |  | Create UML artifacts - class and sequence diagram | 20d? | 2006-06-12 | 2006-07-07 |  | 50d | start no earlier than 2006-06-12 |
| 76 |  | Implement and test core architecture | 20d? | 2006-06-12 | 2006-07-07 |  | 50d | start no earlier than 2006-06-12 |
| 77 |  | Develop prototype | 20d? | 2006-06-12 | 2006-07-07 |  | 50d | start no earlier than 2006-06-12 |
| 78 | 1.2.1.9 | **System testing** | 15d | 2006-06-05 | 2006-06-23 |  | 15d |  |
| 79 | 1.2.1.9.1 | **Setup testing environment** | 5d | 2006-06-05 | 2006-06-09 |  | 30d |  |
| 80 |  | Implement setup/tear down of services | 5d | 2006-06-05 | 2006-06-09 |  | 60d |  |
| 81 | 1.2.1.9.2 | **Domain services** | 10d | 2006-06-05 | 2006-06-16 |  | 35d |  |
| 82 |  | Implement discovery test | 5d | 2006-06-05 | 2006-06-09 |  | 65d |  |
| 83 |  | Implement performance test | 5d | 2006-06-12 | 2006-06-16 | 82 | 65d |  |
| 84 | 1.2.1.9.3 | **Distributed query engine** | 10d | 2006-06-12 | 2006-06-23 | 79 | 30d |  |
| 85 |  | Implement discovery test | 5d | 2006-06-12 | 2006-06-16 |  | 60d |  |
| 86 |  | Implement performance test | 5d | 2006-06-19 | 2006-06-23 | 85 | 60d |  |
| 87 | 1.2.1.9.4 | **Graphical user interface** | 5d | 2006-06-05 | 2006-06-09 |  | 40d |  |
| 88 |  | Create draft QA test plan | 5d | 2006-06-05 | 2006-06-09 |  | 70d |  |
| 89 | 1.2.1.10 | **Security integration** | 15d | 2006-06-05 | 2006-06-23 |  | 15d |  |
| 90 |  | Identify Duke IdP | 10d | 2006-06-05 | 2006-06-16 |  | 65d |  |
| 91 |  | Integrate Duke IdP with Dorian | 15d | 2006-06-05 | 2006-06-23 |  | 30d |  |
| 92 | 1.2.2 | **Iteration 2** | 30d? | 2006-07-17 | 2006-08-25 | 22 | 0d |  |
| 93 | 1.2.2.1 | **Final use case document** | 10d | 2006-07-17 | 2006-07-28 |  | 20d |  |
| 94 |  | Finalize problem scenarios | 5d | 2006-07-17 | 2006-07-21 |  | 35d |  |
| 95 |  | Finalize use cases | 5d | 2006-07-24 | 2006-07-28 | 94 | 35d |  |
| 96 | 1.2.2.2 | **Final requirements and specifications document** | 15d | 2006-07-17 | 2006-08-04 |  | 15d |  |
| 97 |  | Finalize requirements | 5d | 2006-07-17 | 2006-07-21 |  | 30d |  |
| 98 |  | Finalize traceability matrix | 5d | 2006-07-24 | 2006-07-28 | 97 | 30d |  |
| 99 |  | Finalize UML | 5d | 2006-07-31 | 2006-08-04 | 98 | 30d |  |
| 100 |  | Draft dataset document (final) | 10d | 2006-07-17 | 2006-07-28 |  | 20d |  |
| 101 | 1.2.2.4 | **Dataset preparation** | 20d | 2006-07-17 | 2006-08-11 |  | 10d |  |
| 102 | 1.2.2.4.1 | **Tumor registry** | 20d | 2006-07-17 | 2006-08-11 | 33 | 25d |  |
| 103 |  | CDE document | 5d | 2006-07-17 | 2006-07-21 |  | 25d |  |
| 104 |  | Dataset deidentification | 10d | 2006-07-24 | 2006-08-04 | 103 | 25d |  |
| 105 |  | Expose database | 5d | 2006-08-07 | 2006-08-11 | 104 | 25d |  |
| 106 | 1.2.2.4.2 | **GEMS Illumina** | 20d | 2006-07-17 | 2006-08-11 |  | 25d |  |
| 107 |  | CDE document | 5d | 2006-07-17 | 2006-07-21 |  | 25d |  |
| 108 |  | Dataset deidentification | 10d | 2006-07-24 | 2006-08-04 | 107 | 25d |  |
| 109 |  | Expose database | 5d | 2006-08-07 | 2006-08-11 | 108 | 25d |  |
| 110 | 1.2.2.5 | **Tool installation** | 25d | 2006-07-17 | 2006-08-18 |  | 5d |  |
| 111 | 1.2.2.5.1 | **caIntegrator** | 25d | 2006-07-17 | 2006-08-18 |  | 5d |  |
| 112 |  | Document CDE extension | 5d | 2006-07-17 | 2006-07-21 |  | 5d |  |
| 113 |  | Extend model | 5d | 2006-07-24 | 2006-07-28 | 112 | 5d |  |
| 114 |  | Apply model to tool | 5d | 2006-07-31 | 2006-08-04 | 113 | 5d |  |
| 115 |  | Install services | 5d | 2006-08-07 | 2006-08-11 | 114 | 5d |  |
| 116 |  | Install tool | 5d | 2006-08-14 | 2006-08-18 | 115 | 5d |  |
| 117 | 1.2.2.5.2 | **CTOM** | 25d | 2006-07-17 | 2006-08-18 |  | 5d |  |
| 118 |  | Document CDE extension | 5d | 2006-07-17 | 2006-07-21 |  | 5d |  |
| 119 |  | Extend model | 5d | 2006-07-24 | 2006-07-28 | 118 | 5d |  |
| 120 |  | Apply model to tool | 5d | 2006-07-31 | 2006-08-04 | 119 | 5d |  |
| 121 |  | Install services | 5d | 2006-08-07 | 2006-08-11 | 120 | 5d |  |
| 122 |  | Install tool | 5d | 2006-08-14 | 2006-08-18 | 121 | 5d |  |
| 123 | 1.2.2.6 | **Complete API development for non-caBIG sytems** | 20d? | 2006-07-17 | 2006-08-11 |  | 10d |  |
| 124 |  | Enhance UML domain model | 20d? | 2006-07-17 | 2006-08-11 |  | 25d | start no earlier than 2006-07-10 |
| 125 |  | Complete O/R mapping | 20d? | 2006-07-17 | 2006-08-11 |  | 25d | start no earlier than 2006-07-10 |
| 126 |  | Complete semantic annotation | 10d? | 2006-07-17 | 2006-07-28 |  | 25d | start no earlier than 2006-07-10 |
| 127 |  | Generate API using caCORE SDK | 10d? | 2006-07-31 | 2006-08-11 | 126 | 25d |  |
| 128 |  | Implement security | 20d | 2006-07-17 | 2006-08-11 |  | 10d | start no earlier than 2006-07-10 |
| 129 |  | Develop data services for caBIG/non-caBIG systems | 10d | 2006-08-07 | 2006-08-18 |  | 5d | start no earlier than 2006-08-07 |
| 130 | 1.2.2.9 | **Design develop and test distributed query engine architecture** | 30d | 2006-07-17 | 2006-08-25 |  | 0d |  |
| 131 |  | Enhance UML artifacts | 10d | 2006-07-17 | 2006-07-28 |  | 35d | start no earlier than 2006-07-10 |
| 132 |  | Code and Test | 30d | 2006-07-17 | 2006-08-25 |  | 0d | start no earlier than 2006-07-10 |
| 133 | 1.2.2.10 | **Design, develop and test GUI** | 30d? | 2006-07-17 | 2006-08-25 |  | 0d |  |
| 134 |  | Enhance UML artifacts | 20d? | 2006-07-17 | 2006-08-11 |  | 25d | finish no earlier than 2006-08-04 |
| 135 |  | Enhance prototype | 30d | 2006-07-17 | 2006-08-25 |  | 0d | start no earlier than 2006-07-10 |
| 136 | 1.2.2.11 | **Testing** | 20d | 2006-07-17 | 2006-08-11 |  | 10d |  |
| 137 |  | Draft testing report | 20d | 2006-07-17 | 2006-08-11 |  | 10d |  |
| 138 | 1.2.2.11.2 | **Domain services** | 20d | 2006-07-17 | 2006-08-11 |  | 10d |  |
| 139 |  | Translate use cases into queries | 10d | 2006-07-17 | 2006-07-28 |  | 10d |  |
| 140 |  | Implement base data test | 5d | 2006-07-31 | 2006-08-04 | 139 | 10d |  |

| ID | WBS | Task | Duration | Start | Finish | Predecessors | Total float | Constraint |
| --- | --- | --- | --- | --- | --- | --- | --- | --- |
| 141 |  | Implement security test | 5d | 2006-08-07 | 2006-08-11 | 140 | 10d |  |
| 142 | 1.2.2.11.3 | **Distributed query engine** | 20d | 2006-07-17 | 2006-08-11 |  | 10d |  |
| 143 |  | Translate use cases into queries | 10d | 2006-07-17 | 2006-07-28 |  | 10d |  |
| 144 |  | Implement base data test | 5d | 2006-07-31 | 2006-08-04 | 143 | 10d |  |
| 145 |  | Implement security test | 5d | 2006-08-07 | 2006-08-11 | 144 | 10d |  |
| 146 | 1.2.2.11.4 | **Graphical user interface** | 15d | 2006-07-17 | 2006-08-04 |  | 15d |  |
| 147 |  | Final QA test plan | 15d | 2006-07-17 | 2006-08-04 |  | 15d |  |
| 148 | 1.3 | **Construction** | 40d | 2006-08-28 | 2006-10-20 | 21 | 0d |  |
| 149 | 1.3.1 | **Iteration 1** | 20d | 2006-08-28 | 2006-09-22 |  | 0d |  |
| 150 |  | Final dataset document (draft) | 20d | 2006-08-28 | 2006-09-22 |  | 0d |  |
| 151 | 1.3.1.2 | **Dataset preparation** | 10d | 2006-08-28 | 2006-09-08 |  | 10d |  |
| 152 | 1.3.1.2.1 | **Construct demo datasets** | 10d | 2006-08-28 | 2006-09-08 |  | 10d |  |
| 153 |  | Construct MAW3 dataset | 5d | 2006-08-28 | 2006-09-01 |  | 10d |  |
| 154 |  | Construct DSR dataset | 5d | 2006-09-04 | 2006-09-08 | 153 | 10d |  |
| 155 |  | Enhance data services for caBIG/non-caBIG systems | 5d | 2006-08-28 | 2006-09-01 |  | 15d | start no earlier than 2006-08-21 |
| 156 |  | Implement distributed query engine | 20d | 2006-08-28 | 2006-09-22 |  | 0d | start no earlier than 2006-08-21 |
| 157 |  | Implement GUI | 20d | 2006-08-28 | 2006-09-22 |  | 0d | start no earlier than 2006-08-21 |
| 158 | 1.3.1.6 | **Testing** | 20d | 2006-08-28 | 2006-09-22 |  | 0d |  |
| 159 | 1.3.1.6.1 | **Domain services** | 20d | 2006-08-28 | 2006-09-22 |  | 0d |  |
| 160 |  | Implement metadata test | 5d | 2006-08-28 | 2006-09-01 |  | 15d |  |
| 161 |  | Implement data test | 20d | 2006-08-28 | 2006-09-22 |  | 0d |  |
| 162 | 1.3.1.6.2 | **Distributed query engine** | 20d | 2006-08-28 | 2006-09-22 |  | 0d |  |
| 163 |  | Implement metadata test | 5d | 2006-08-28 | 2006-09-01 |  | 15d |  |
| 164 |  | Implement data test | 20d | 2006-08-28 | 2006-09-22 |  | 0d |  |
| 165 | 1.3.1.6.3 | **Graphical user interface** | 7.5d | 2006-08-28 | 2006-09-06 |  | 12.5d |  |
| 166 |  | Perform QA tests | 7.5d | 2006-08-28 | 2006-09-06 |  | 12.5d |  |
| 167 | 1.3.2 | **Iteration 2** | 20d | 2006-09-25 | 2006-10-20 | 149 | 0d |  |
| 168 |  | Final dataset document (final) | 15d | 2006-09-25 | 2006-10-13 |  | 5d |  |
| 169 | 1.3.2.2 | **Dataset preparation** | 10d | 2006-09-25 | 2006-10-06 |  | 10d |  |
| 170 | 1.3.2.2.1 | **Construct demo datasets** | 10d | 2006-09-25 | 2006-10-06 |  | 10d |  |
| 171 |  | Construct tumor registry dataset | 5d | 2006-09-25 | 2006-09-29 |  | 10d |  |
| 172 |  | Construct GEMS Illumina dataset | 5d | 2006-10-02 | 2006-10-06 | 171 | 10d |  |
| 173 |  | Develop data service for caTRIP | 5d | 2006-09-25 | 2006-09-29 |  | 15d | start no earlier than 2006-09-18 |
| 174 |  | Complete distributed query engine | 20d | 2006-09-25 | 2006-10-20 |  | 0d | start no earlier than 2006-09-18 |
| 175 |  | Complete GUI | 20d | 2006-09-25 | 2006-10-20 |  | 0d | start no earlier than 2006-09-18 |
| 176 |  | System Testing | 20d | 2006-09-25 | 2006-10-20 |  | 0d | start no earlier than 2006-09-18 |
| 177 |  | Develop draft technical architecture guide | 10d | 2006-10-02 | 2006-10-13 |  | 5d | start no earlier than 2006-10-02 |
| 178 | 1.3.2.8 | **Testing** | 20d | 2006-09-25 | 2006-10-20 |  | 0d |  |
| 179 | 1.3.2.8.1 | **Domain services** | 20d | 2006-09-25 | 2006-10-20 |  | 0d |  |
| 180 |  | Final testing report | 20d | 2006-09-25 | 2006-10-20 |  | 0d |  |
| 181 | 1.3.2.8.2 | **Distributed query engine** | 20d | 2006-09-25 | 2006-10-20 |  | 0d |  |
| 182 |  | Final testing report | 20d | 2006-09-25 | 2006-10-20 |  | 0d |  |
| 183 | 1.3.2.8.3 | **Graphical user interface** | 20d | 2006-09-25 | 2006-10-20 |  | 0d |  |
| 184 |  | Final testing report | 20d | 2006-09-25 | 2006-10-20 |  | 0d |  |
| 185 | 1.4 | **Transition** | 10d | 2006-10-23 | 2006-11-03 | 148 | 0d |  |
| 186 |  | Final testing | 10d | 2006-10-23 | 2006-11-03 |  | 0d |  |
| 187 | 1.4.2 | **Final documentation** | 10d | 2006-10-23 | 2006-11-03 |  | 0d |  |
| 188 |  | Complete technical architecture guide | 10d | 2006-10-23 | 2006-11-03 |  | 0d | start no earlier than 2006-10-16 |
| 189 | 1.5 | **Meetings** | 107d | 2006-05-01 | 2006-09-26 |  | 43d |  |
| 190 |  | Project kickoff | 1d | 2006-05-01 | 2006-05-01 |  | 148d |  |
| 191 |  | First F2F | 2d | 2006-05-24 | 2006-05-25 |  | 131d | finish no earlier than 2006-05-25 |
| 192 |  | Second F2F | 2d | 2006-09-25 | 2006-09-26 |  | 43d | start no earlier than 2006-09-25 |
| 193 | 1.6 | **Deliverables** | 132d | 2006-05-02 | 2006-11-01 | 190 | 17d |  |
| 194 |  | Submit project management plan | 1d | 2006-06-01 | 2006-06-01 |  | 126d | start no earlier than 2006-06-01 |
| 195 |  | Submit communications plan | 1d | 2006-06-01 | 2006-06-01 |  | 126d | start no earlier than 2006-06-01 |
| 196 |  | Submit risk management matrix | 1d | 2006-06-01 | 2006-06-01 |  | 126d | start no earlier than 2006-06-01 |
| 197 |  | Submit draft use case document | 1d | 2006-07-03 | 2006-07-03 |  | 104d | start no earlier than 2006-07-03 |
| 198 |  | Submit final use case document | 1d | 2006-08-01 | 2006-08-01 |  | 83d | start no earlier than 2006-08-01 |
| 199 |  | Submit draft requirements and specifications document | 1d | 2006-06-01 | 2006-06-01 |  | 126d | start no earlier than 2006-06-01 |
| 200 |  | Submit final requirements and specifications document | 1d | 2006-07-03 | 2006-07-03 |  | 104d | start no earlier than 2006-07-03 |
| 201 |  | Submit draft UML model | 1d | 2006-08-01 | 2006-08-01 |  | 83d | start no earlier than 2006-08-01 |
| 202 |  | Submit draft API | 1d | 2006-11-01 | 2006-11-01 |  | 17d | start no earlier than 2006-11-01 |
| 203 |  | Submit XMI file | 1d | 2006-10-02 | 2006-10-02 |  | 39d | start no earlier than 2006-10-02 |
| 204 |  | Submit CDE use report | 1d | 2006-11-01 | 2006-11-01 |  | 17d | start no earlier than 2006-11-01 |
| 205 |  | Submit draft test approach | 1d | 2006-06-01 | 2006-06-01 |  | 126d | start no earlier than 2006-06-01 |
| 206 |  | Submit final test approach | 1d | 2006-07-03 | 2006-07-03 |  | 104d | start no earlier than 2006-07-03 |
| 207 |  | Submit draft datasets | 1d | 2006-08-01 | 2006-08-01 |  | 83d | start no earlier than 2006-08-01 |
| 208 |  | Submit final datasets | 1d | 2006-11-01 | 2006-11-01 |  | 17d | start no earlier than 2006-11-01 |
| 209 |  | Submit draft prototype code | 1d | 2006-08-01 | 2006-08-01 |  | 83d | start no earlier than 2006-08-01 |
| 210 |  | Submit final prototype code | 1d | 2006-11-01 | 2006-11-01 |  | 17d | start no earlier than 2006-11-01 |

| ID | WBS | Task | Duration | Start | Finish | Total float | Constraint |
| --- | --- | --- | --- | --- | --- | --- | --- |
| 211 |  | Submit testing report for draft prototype | 1d | 2006-08-01 | 2006-08-01 | 83d | start no earlier than 2006-08-01 |
| 212 |  | Submit testing report for final prototype | 1d | 2006-11-01 | 2006-11-01 | 17d | start no earlier than 2006-11-01 |
| 213 |  | Submit technical/architectural guide | 1d | 2006-05-02 | 2006-05-02 | 148d |  |
| 214 | 2 | **Phase II** | 1d? | 2006-05-01 | 2006-05-01 | 149d |  |
| 215 |  | Management | 1d? | 2006-05-01 | 2006-05-01 | 149d |  |
| 216 |  | Use case definition | 1d? | 2006-05-01 | 2006-05-01 | 149d |  |
| 217 |  | Dataset migration | 1d? | 2006-05-01 | 2006-05-01 | 149d |  |
| 218 |  | Tool installation | 1d? | 2006-05-01 | 2006-05-01 | 149d |  |
| 219 |  | Testing | 1d? | 2006-05-01 | 2006-05-01 | 149d |  |

## Version 2 (saved 2006-05-31)

Note of the change: Adding resource assignments for SemanticBits tasks

Last finish stays 2006-11-03.

Changed:

| ID | Task | Start | Finish | Duration | Total float | Other |
| --- | --- | --- | --- | --- | --- | --- |
| 25 | Finalize system use cases | 2006-06-05 → 2006-06-19 (+14d) | 2006-07-14 → 2006-07-07 (-7d) | 30d? → 15d? | 0d → 5d | resources SB → Sanjeev; Bill |
| 27 | **Draft requirements and specifications document** |  | 2006-06-30 → 2006-06-16 (-14d) | 20d → 10d | 10d → 20d | resources Patrick → Patrick; Bill; Ram |
| 28 | Translate use cases into requirements |  | 2006-06-16 → 2006-06-09 (-7d) | 10d → 5d | 30d → 20d | resources Patrick → Patrick; Bill |
| 29 | Create test traceability matrix | 2006-06-19 → 2006-06-12 (-7d) | 2006-06-23 → 2006-06-16 (-7d) |  | 30d → 20d |  |
| 30 | Draft architecture UML diagrams |  | 2006-06-30 → 2006-06-16 (-14d) | 20d → 10d | 25d → 20d | resources Patrick → Patrick; Ram |
| 45 | **Tool installation** |  | 2006-07-07 → 2006-07-05 (-2d) | 25d → 22.5d | 5d → 7.5d | resources Bioinformatics; Mark → Bioinformatics; Mark; Bill; Sanjeev |
| 46 | Install and configure caGrid 1.0 infrastructure |  |  |  | 70d → 25d | resources SB → Sanjeev |
| 47 | **caTissue Core** |  | 2006-07-07 → 2006-07-05 (-2d) | 25d → 22.5d | 20d → 7.5d | resources Bioinformatics; Mark → Bioinformatics; Mark; Bill |
| 51 | Develop and Install data service |  | 2006-06-30 → 2006-06-28 (-2d) | 5d → 2.5d | 50d → 7.5d | was named Install services; resources Bioinformatics → Bioinformatics; Bill |
| 52 | Install tool | 2006-07-03 → 2006-06-28 (-5d) | 2006-07-07 → 2006-07-05 (-2d) |  | 50d → 7.5d |  |
| 53 | **CAE** |  | 2006-07-07 → 2006-07-05 (-2d) | 25d → 22.5d | 20d → 7.5d |  |
| 57 | Develop and Install data service |  | 2006-06-30 → 2006-06-28 (-2d) | 5d → 2.5d | 50d → 7.5d | was named Install services; resources Bioinformatics → Bioinformatics; Bill |
| 58 | Install tool | 2006-07-03 → 2006-06-28 (-5d) | 2006-07-07 → 2006-07-05 (-2d) |  | 50d → 7.5d |  |
| 59 | **caTIES** |  | 2006-07-07 → 2006-07-05 (-2d) | 25d → 22.5d | 20d → 7.5d |  |
| 63 | Develop and Install data service |  | 2006-06-30 → 2006-06-28 (-2d) | 5d → 2.5d | 50d → 7.5d | was named Install services; resources Bioinformatics → Bioinformatics; Sanjeev |
| 64 | Install tool | 2006-07-03 → 2006-06-28 (-5d) | 2006-07-07 → 2006-07-05 (-2d) |  | 50d → 7.5d |  |
| 65 | **Develop API for non-caBIG systems (Tumor Registry)** |  |  |  |  | was named Develop API for non-caBIG systems |
| 66 | Develop UML domain model |  |  |  | 60d → 15d | resources SB → Ram |
| 67 | Perform O/R mapping using Hibernate |  |  |  | 60d → 15d | resources SB → Sanjeev |
| 68 | Perform semantic annotation |  |  |  | 55d → 10d | resources SB → none |
| 69 | Generate API using caCORE SDK |  |  |  | 55d → 10d | resources SB → Sanjeev |
| 70 | **Design,develop and test distributed query engine architecture** |  |  |  |  | resources SB → Srini; Ram |
| 71 | Finalize federated query schema |  | 2006-06-09 → 2006-06-07 (-2d) | 5d → 2.5d | 70d → 27.5d | resources SB → Srini; Ram |
| 72 | Design distributed query engine - Create UML artifacts |  | 2006-07-14 → 2006-06-23 (-21d) | 30d? → 15d? | 0d → 15d | resources SB → Srini; Ram |
| 73 | Code and Test |  |  |  |  | resources SB → Srini |
| 74 | **Design, develop and test core architecture for GUI** |  |  |  |  | resources SB → Sanjeev; Ram |
| 75 | Create UML artifacts - class and sequence diagram |  | 2006-07-07 → 2006-06-23 (-14d) | 20d? → 10d? | 50d → 15d | resources SB → Sanjeev; Ram |
| 76 | Implement and test core architecture |  | 2006-07-07 → 2006-06-23 (-14d) | 20d? → 10d? | 50d → 15d | resources SB → Sanjeev; Ram |
| 77 | Develop prototype |  |  |  | 50d → 5d | resources SB → Sanjeev |
| 110 | **Tool installation** |  | 2006-08-18 → 2006-08-16 (-2d) | 25d → 22.5d | 5d → 7.5d |  |
| 111 | **caIntegrator** |  | 2006-08-18 → 2006-08-16 (-2d) | 25d → 22.5d | 5d → 7.5d | resources Bioinformatics; Mark → Bioinformatics; Mark; Srini |
| 115 | Develop and Install data service |  | 2006-08-11 → 2006-08-09 (-2d) | 5d → 2.5d | 5d → 7.5d | was named Install services; resources Bioinformatics → Bioinformatics; Srini |
| 116 | Install tool | 2006-08-14 → 2006-08-09 (-5d) | 2006-08-18 → 2006-08-16 (-2d) |  | 5d → 7.5d |  |
| 117 | **CTOM** |  | 2006-08-18 → 2006-08-15 (-3d) | 25d → 21.67d | 5d → 8.33d |  |
| 121 | Develop and Install data service |  | 2006-08-11 → 2006-08-08 (-3d) | 5d → 1.67d | 5d → 8.33d | was named Install services; resources Bioinformatics → Bioinformatics; Bill; Ram |
| 122 | Install tool | 2006-08-14 → 2006-08-08 (-6d) | 2006-08-18 → 2006-08-15 (-3d) |  | 5d → 8.33d |  |
| 124 | Enhance UML domain model |  |  |  | 25d → 10d | resources SB → Ram |
| 125 | Complete O/R mapping |  |  |  | 25d → 10d | resources SB → Sanjeev |
| 127 | Generate API using caCORE SDK |  |  |  | 25d → 10d | resources SB → Sanjeev |
| 128 | Implement security |  | 2006-08-11 → 2006-07-25 (-17d) | 20d → 6.67d | 10d → 23.33d | resources SB → Srini; Ram; Vinay |
| 129 | Develop data services for caBIG/non-caBIG systems |  | 2006-08-18 → 2006-08-09 (-9d) | 10d → 2.5d | 5d → 12.5d | resources SB → Bill; Sanjeev; Srini; Ram |
| 130 | **Design develop and test distributed query engine architecture** |  |  |  |  | resources SB → Srini |
| 131 | Enhance UML artifacts |  |  |  | 35d → 20d | resources SB → Srini |
| 132 | Code and Test |  |  |  |  | resources SB → Srini |
| 133 | **Design, develop and test GUI** |  |  |  |  | resources SB → Sanjeev |
| 134 | Enhance UML artifacts |  |  |  | 25d → 10d | resources SB → Sanjeev |
| 135 | Enhance prototype |  |  |  |  | resources SB → Sanjeev |

## Version 3 (saved 2006-06-19)

Note of the change: *** empty log message ***

Last finish stays 2006-11-03. Complete tasks 0 → 14.

Added:

| ID | Task | Duration | Start | Finish | Resources |
| --- | --- | --- | --- | --- | --- |
| 78 | **Basic testing** | 15d | 2006-06-05 | 2006-06-23 | Patrick; Mark |
| 118 | Evaluate CTOM for appropriate model and APIs per Risk 5 | 5d | 2006-07-17 | 2006-07-21 | Ram |

Removed: 136 Testing

Changed:

| ID | Task | Start | Finish | Duration | Complete | Total float | Other |
| --- | --- | --- | --- | --- | --- | --- | --- |
| 1 | **Phase I** | 2006-05-01 A |  |  | 0% → 15% |  |  |
| 2 | **Inception** | 2006-05-01 A |  |  | 0% → 75% |  |  |
| 4 | Draft project management plan | 2006-05-01 A | 2006-06-02 A |  | 0% → 100% | 0d → none |  |
| 5 | Develop phase and iteration plan | 2006-05-01 A | 2006-05-12 A |  | 0% → 100% | 15d → none |  |
| 6 | Draft communications plan | 2006-05-01 A | 2006-06-02 A |  | 0% → 100% | 0d → none |  |
| 7 | Draft risk management matrix | 2006-05-01 A | 2006-06-02 A |  | 0% → 100% | 0d → none |  |
| 8 | Develop scope and vision document | 2006-05-11 A | 2006-05-26 A |  | 0% → 100% | 5d → none |  |
| 9 | Draft test plan | 2006-05-01 A | 2006-06-02 A |  | 0% → 100% | 0d → none |  |
| 10 | Setup Gforge | 2006-05-01 A | 2006-05-12 A |  | 0% → 100% | 5d → none | was named Setup GForge |
| 11 | Setup development environment | 2006-05-15 A | 2006-05-26 A |  | 0% → 100% | 5d → none |  |
| 12 | Define initial problem scenerios | 2006-05-01 A | 2006-06-02 A |  | 0% → 100% | 0d → none |  |
| 13 | Define problem scenarios | 2006-05-24 A | 2006-05-25 A |  | 0% → 100% | 6d → none |  |
| 16 | Define initial datasets | 2006-05-01 A | 2006-05-26 A |  | 0% → 100% | 5d → none |  |
| 17 | **Setup testbed** | 2006-05-01 A |  |  | 0% → 92% |  |  |
| 18 | Purchase testbed | 2006-05-01 A | 2006-05-12 A |  | 0% → 100% | 14d → none |  |
| 19 | Add testbed to backup cycle | 2006-05-15 A | 2006-05-15 A |  | 0% → 100% | 14d → none |  |
| 21 | **Elaboration** | 2006-06-05 A |  |  |  |  |  |
| 22 | **Iteration 1** | 2006-06-05 A |  |  |  |  |  |
| 32 | **Dataset preparation** | 2006-06-05 A |  |  | 0% → 3% |  |  |
| 33 | **Dataset acquisition** | 2006-06-05 A |  |  | 0% → 14% |  |  |
| 34 | Determine available datasets | 2006-06-05 A | 2006-06-05 A |  | 0% → 100% | 3d → none |  |
| 137 | **System testing** | 2006-06-05 → 2006-07-17 (+42d) | 2006-06-23 → 2006-08-11 (+49d) | 15d → 20d |  | 15d → 10d |  |
| 166 | **Graphical user interface** |  | 2006-09-06 → 2006-08-31 (-6d) | 7.5d → 3.75d |  | 12.5d → 16.25d |  |
| 167 | Perform QA tests |  | 2006-09-06 → 2006-08-31 (-6d) | 7.5d → 3.75d |  | 12.5d → 16.25d | resources Mark; domain expert → Mark; Raj; Janet; TBD |

## Version 4 (saved 2006-08-29)

Note of the change: updated with reprioritization

Last finish stays 2006-11-03. Complete tasks 14 → 42.

Added:

| ID | Task | Duration | Start | Finish | Resources |
| --- | --- | --- | --- | --- | --- |
| 84 | Construct draft test data | 10d | 2006-07-17 A | 2006-07-28 A | Mark |
| 130 | Implement simplified GUI | 15d | 2006-08-28 | 2006-09-15 | Sanjeev |
| 145 | Complete simplified GUI | 10d | 2006-09-25 | 2006-10-06 |  |
| 146 | Create GUI installer | 5d | 2006-09-25 | 2006-09-29 |  |
| 148 | **Deployment** | 5d | 2006-09-25 | 2006-09-29 |  |
| 149 | Deploy public services | 5d | 2006-09-25 | 2006-09-29 |  |
| 209 | **Implement security** | 10d | 2006-05-01 | 2006-05-12 |  |
| 210 | Integrate Duke IdP with IdP grid service | 10d | 2006-05-01 | 2006-05-12 | Patrick |
| 211 | **Basic testing** | 40d | 2006-05-01 | 2006-06-23 |  |
| 218 | **System testing** | 5d | 2006-05-01 | 2006-05-05 |  |
| 219 | **Domain services** | 5d | 2006-05-01 | 2006-05-05 |  |
| 222 | **DQE** | 5d | 2006-05-01 | 2006-05-05 |  |

Removed: 3 Install MS Project Server; 20 Image testbed after basic environment is set up; 91 Integrate Duke IdP with Dorian; 154 Construct MAW3 dataset; 155 Construct DSR dataset; 170 Dataset preparation; 174 Develop data service for caTRIP; 177 System Testing

Changed:

| ID | Task | Start | Finish | Duration | Complete | Total float | Predecessors | Other |
| --- | --- | --- | --- | --- | --- | --- | --- | --- |
| 1 | **Phase I** |  |  |  | 15% → 43% |  |  |  |
| 2 | **Inception** |  | 2006-06-02 A |  | 75% → 100% | 0d → none |  |  |
| 13 | Define initial scientific use cases | 2006-05-01 A | 2006-05-26 A |  | 0% → 100% | 5d → none |  |  |
| 14 | Define initial system use cases | 2006-05-01 A | 2006-05-26 A |  | 0% → 100% | 5d → none |  |  |
| 16 | **Setup testbed** |  | 2006-05-15 A |  | 92% → 100% | 14d → none |  |  |
| 19 | **Elaboration** |  |  |  | 0% → 42% |  |  |  |
| 20 | **Iteration 1** |  |  |  | 0% → 74% |  |  |  |
| 21 | **Draft use case document** | 2006-06-05 A | 2006-07-14 A |  | 0% → 100% | 0d → none |  |  |
| 22 | Finalize scientific use cases | 2006-06-05 A | 2006-07-14 A |  | 0% → 100% | 0d → none |  |  |
| 23 | Finalize system use cases | 2006-06-19 A | 2006-07-07 A |  | 0% → 100% | 5d → none |  |  |
| 24 | Draft use cases | 2006-06-05 A | 2006-06-14 A |  | 0% → 100% | 22d → none |  |  |
| 25 | **Draft requirements and specifications document** | 2006-06-05 A | 2006-06-16 A |  | 0% → 100% | 20d → none |  |  |
| 26 | Translate use cases into requirements | 2006-06-05 A | 2006-06-09 A |  | 0% → 100% | 20d → none |  |  |
| 27 | Create test traceability matrix | 2006-06-12 A | 2006-06-16 A |  | 0% → 100% | 20d → none |  |  |
| 28 | Draft architecture UML diagrams | 2006-06-05 A | 2006-06-16 A |  | 0% → 100% | 20d → none |  |  |
| 29 | Draft dataset document (draft) | 2006-06-05 A | 2006-06-30 A |  | 0% → 100% | 10d → none |  |  |
| 30 | **Dataset preparation** |  | 2006-07-11 → 2006-06-13 A (-28d) | 27d → 7d | 3% → 100% | 3d → none |  |  |
| 31 | **Dataset acquisition** |  | 2006-06-13 A |  | 14% → 100% | 3d → none |  |  |
| 33 | Match datasets to use cases | 2006-06-06 A | 2006-06-06 A |  | 0% → 100% | 3d → none |  |  |
| 34 | Fill out IRB forms | 2006-06-07 A | 2006-06-13 A |  | 0% → 100% | 3d → none |  |  |
| 35 | **Tool installation** | 2006-06-05 A |  |  | 0% → 38% |  |  |  |
| 36 | Install and configure caGrid 1.0 infrastructure | 2006-06-05 A | 2006-06-09 A |  | 0% → 100% | 25d → none |  |  |
| 37 | **caTissue Core** | 2006-06-05 A | 2006-07-05 A |  | 0% → 100% | 7.5d → none |  |  |
| 38 | Document CDE extension | 2006-06-05 A | 2006-06-09 A |  | 0% → 100% | 5d → none |  |  |
| 39 | Extend model | 2006-06-12 A | 2006-06-16 A |  | 0% → 100% | 5d → none |  |  |
| 40 | Apply model to tool | 2006-06-19 A | 2006-06-23 A |  | 0% → 100% | 5d → none |  |  |
| 41 | Develop and Install data service | 2006-06-26 A | 2006-06-28 A |  | 0% → 100% | 7.5d → none |  |  |
| 42 | Install tool | 2006-06-28 A | 2006-07-05 A |  | 0% → 100% | 7.5d → none |  |  |
| 55 | **Develop API for non-caBIG systems (Tumor Registry)** | 2006-06-05 A |  |  | 0% → 30% |  |  |  |
| 56 | Develop UML domain model | 2006-06-05 A | 2006-06-23 A |  | 0% → 100% | 15d → none |  | resources Ram → Ram; Bill; Wilma; Patrick |
| 57 | Perform O/R mapping using Hibernate |  |  |  |  |  |  | resources Sanjeev → Bill |
| 58 | Perform semantic annotation |  |  |  |  |  |  | resources none → Bill |
| 59 | Generate API using caCORE SDK |  |  |  |  |  |  | resources Sanjeev → Bill |
| 60 | **Design,develop and test distributed query engine architecture** | 2006-06-05 A | 2006-07-14 A |  | 0% → 100% | 0d → none |  |  |
| 61 | Finalize federated query schema | 2006-06-05 A | 2006-06-07 A |  | 0% → 100% | 27.5d → none |  |  |
| 62 | Design distributed query engine - Create UML artifacts | 2006-06-05 A | 2006-06-23 A |  | 0% → 100% | 15d → none |  |  |
| 63 | Code and Test | 2006-06-05 A | 2006-07-14 A |  | 0% → 100% | 0d → none |  |  |
| 64 | **Design, develop and test core architecture for GUI** | 2006-06-12 A | 2006-07-07 A |  | 0% → 100% | 5d → none |  |  |
| 65 | Create UML artifacts - class and sequence diagram | 2006-06-12 A | 2006-06-23 A |  | 0% → 100% | 15d → none |  |  |
| 66 | Implement and test core architecture | 2006-06-12 A | 2006-06-23 A |  | 0% → 100% | 15d → none |  |  |
| 67 | Develop prototype | 2006-06-12 A | 2006-07-07 A |  | 0% → 100% | 5d → none |  |  |
| 68 | **Basic testing** | 2006-06-05 A | 2006-06-23 → 2006-06-09 (-14d) | 15d → 5d | 0% → 50% | 15d → 25d |  |  |
| 69 | **Setup testing environment** | 2006-06-05 A | 2006-06-09 A |  | 0% → 100% | 15d → none |  |  |
| 70 | Implement setup/tear down of services | 2006-06-05 A | 2006-06-09 A |  | 0% → 100% | 60d → none |  |  |
| 73 | **Security integration** | 2006-06-05 A | 2006-06-23 → 2006-06-16 A (-7d) | 15d → 10d | 0% → 100% | 15d → none |  |  |
| 74 | Identify Duke IdP | 2006-06-05 A | 2006-06-16 A |  | 0% → 100% | 20d → none |  |  |
| 75 | **Iteration 2** | 2006-07-17 A |  |  | 0% → 9% |  |  |  |
| 76 | **Final use case document** | 2006-07-17 A |  |  |  |  |  |  |
| 78 | Finalize use cases | 2006-07-24 A |  |  |  | 35d → 20d |  |  |
| 112 | **System testing** | 2006-07-17 A |  |  | 0% → 31% |  |  |  |
| 113 | Draft testing report | 2006-07-17 A | 2006-08-11 A |  | 0% → 100% | 10d → none |  |  |
| 114 | **Domain services** |  | 2006-08-11 → 2006-08-04 (-7d) | 20d → 15d |  | 10d → 15d |  |  |
| 117 | **Distributed query engine** |  | 2006-08-11 → 2006-08-04 (-7d) | 20d → 15d |  | 10d → 15d |  |  |
| 125 | **Dataset preparation** |  | 2006-09-08 → 2006-09-22 (+14d) | 10d → 20d |  | 10d → 0d |  |  |
| 126 | Construct demo datasets |  | 2006-09-08 → 2006-09-22 (+14d) | 10d → 20d |  | 10d → 0d |  |  |
| 129 | **Implement GUI** |  | 2006-09-22 → 2006-09-15 (-7d) | 20d → 15d |  | 0d → 5d |  | constraint start no earlier than 2006-08-21 → none; resources SB → Sanjeev |
| 144 | **Complete GUI** |  | 2006-10-20 → 2006-10-06 (-14d) | 20d → 10d |  | 0d → 10d |  | constraint start no earlier than 2006-09-18 → none |
| 150 | **System testing** |  |  |  |  |  |  | was named Testing |
| 186 | **Phase II** |  | 2006-05-01 → 2006-07-11 (+71d) | 1d? → 52d? |  | 134d → 83d |  |  |
| 192 | **Dataset preparation** | 2006-07-17 → 2006-05-01 (-77d) | 2006-08-11 → 2006-07-11 (-31d) | 20d → 52d |  | 10d → 83d |  |  |
| 193 | **Tumor registry** | 2006-07-17 → 2006-06-14 (-33d) | 2006-08-11 → 2006-07-11 (-31d) |  |  | 10d → 83d |  |  |
| 195 | Dataset deidentification | 2006-06-16 → 2006-06-21 (+5d) | 2006-06-23 → 2006-07-04 (+11d) | 5d → 10d |  | 10.5d → 83d | 202 → 194 | resources Mark; Chris → Mark |
| 196 | Expose database | 2006-06-23 → 2006-07-05 (+12d) | 2006-06-30 → 2006-07-11 (+11d) |  |  | 10.5d → 83d |  | resources Mark.Chris → Mark |
| 197 | **GEMS Illumina** | 2006-07-17 → 2006-05-01 (-77d) | 2006-08-11 → 2006-05-26 (-77d) |  |  | 10d → 115d |  |  |
| 198 | CDE document | 2006-07-17 → 2006-05-01 (-77d) | 2006-07-21 → 2006-05-05 (-77d) |  |  | 25d → 115d |  |  |
| 199 | Dataset deidentification | 2006-06-21 → 2006-05-08 (-44d) | 2006-07-04 → 2006-05-19 (-46d) |  |  | 3d → 115d | 194 → 198 |  |
| 200 | Expose database | 2006-07-05 → 2006-05-22 (-44d) | 2006-07-11 → 2006-05-26 (-46d) |  |  | 3d → 115d |  |  |
| 203 | Dataset deidentification | 2006-07-24 → 2006-06-16 (-38d) | 2006-08-04 → 2006-06-23 (-42d) | 10d → 5d |  | 25d → 90.5d | 198 → 202 | resources Mark → Mark; Chris |
| 204 | Expose database | 2006-08-07 → 2006-06-23 (-45d) | 2006-08-11 → 2006-06-30 (-42d) |  |  | 25d → 90.5d |  | resources Mark → Mark.Chris |
| 206 | CDE document | 2006-07-17 → 2006-06-14 (-33d) | 2006-07-21 → 2006-06-20 (-31d) |  |  | 25d → 83d |  |  |

| ID | Task | Start | Finish | Total float | Predecessors |
| --- | --- | --- | --- | --- | --- |
| 207 | Dataset deidentification | 2006-07-24 → 2006-06-21 (-33d) | 2006-08-04 → 2006-07-04 (-31d) | 25d → 83d |  |
| 208 | Expose database | 2006-08-07 → 2006-07-05 (-33d) | 2006-08-11 → 2006-07-11 (-31d) | 25d → 83d |  |
| 212 | **Domain services** | 2006-06-05 → 2006-05-01 (-35d) | 2006-06-16 → 2006-05-12 (-35d) | 20d → 125d |  |
| 213 | Implement discovery test | 2006-06-05 → 2006-05-01 (-35d) | 2006-06-09 → 2006-05-05 (-35d) | 65d → 125d |  |
| 214 | Implement performance test | 2006-06-12 → 2006-05-08 (-35d) | 2006-06-16 → 2006-05-12 (-35d) | 65d → 125d |  |
| 220 | Implement security test | 2006-08-07 → 2006-05-01 (-98d) | 2006-08-11 → 2006-05-05 (-98d) | 10d → 130d | 116 → none |
| 221 | Implement metadata test | 2006-08-28 → 2006-05-01 (-119d) | 2006-09-01 → 2006-05-05 (-119d) | 15d → 130d |  |
| 223 | Implement security test | 2006-08-07 → 2006-05-01 (-98d) | 2006-08-11 → 2006-05-05 (-98d) | 10d → 130d | 119 → none |
| 224 | Implement metadata test | 2006-08-28 → 2006-05-01 (-119d) | 2006-09-01 → 2006-05-05 (-119d) | 15d → 130d |  |

## Version 5 (saved 2006-09-19)

Note of the change: added phase 1 wrapup

Last finish stays 2006-11-03. Complete tasks 42 → 45.

Added:

| ID | Task | Duration | Start | Finish | Predecessors | Resources |
| --- | --- | --- | --- | --- | --- | --- |
| 173 | **Phase 1 wrapup** | 1d? | 2006-05-01 | 2006-05-01 |  |  |
| 174 | **GUI** | 1d? | 2006-05-01 | 2006-05-01 |  | Sanjeev |
| 175 | Discovery | 1d? | 2006-05-01 | 2006-05-01 |  | Sanjeev |
| 176 | **Simplified GUI XML config** | 1d? | 2006-05-01 | 2006-05-01 |  | Sanjeev |
| 177 | Tumor registry | 1d? | 2006-05-01 | 2006-05-01 |  | Sanjeev |
| 178 | SNP | 1d? | 2006-05-01 | 2006-05-01 |  | Sanjeev |
| 179 | Java webstart | 1d? | 2006-05-01 | 2006-05-01 |  | Sanjeev |
| 180 | **Domain services** | 1d? | 2006-05-01 | 2006-05-01 |  |  |
| 181 | **Tumor Registry** | 1d? | 2006-05-01 | 2006-05-01 |  | Bill |
| 182 | Implement database | 1d? | 2006-05-01 | 2006-05-01 |  | Bill |
| 183 | Implement service | 1d? | 2006-05-01 | 2006-05-01 |  | Bill |
| 184 | Deployed | 1d? | 2006-05-01 | 2006-05-01 |  | Bill |
| 185 | **caTissue CORE** | 1d? | 2006-05-01 | 2006-05-01 |  | Sanjeev |
| 186 | Install update | 1d? | 2006-05-01 | 2006-05-01 |  | Sanjeev |
| 187 | Deployed | 1d? | 2006-05-01 | 2006-05-01 |  | Sanjeev |
| 188 | **CAE** | 1d? | 2006-05-01 | 2006-05-01 |  | Srini; Patrick |
| 190 | Register extension | 1d? | 2006-05-01 | 2006-05-01 |  | Srini |
| 191 | Implement database | 1d? | 2006-05-01 | 2006-05-01 |  | Srini |
| 192 | Implement service | 1d? | 2006-05-01 | 2006-05-01 |  | Srini |
| 193 | Deployed | 1d? | 2006-05-01 | 2006-05-01 |  | Srini |
| 194 | **SNP** | 1d? | 2006-05-01 | 2006-05-01 |  | Srini |
| 195 | Install database | 1d? | 2006-05-01 | 2006-05-01 |  | Srini |
| 196 | Implement service | 1d? | 2006-05-01 | 2006-05-01 |  | Srini |
| 197 | Deploy | 1d? | 2006-05-01 | 2006-05-01 |  | Srini |
| 198 | **Test data** | 1d? | 2006-05-01 | 2006-05-01 |  | Mark |
| 199 | CAE | 1d? | 2006-05-01 | 2006-05-01 |  | Mark |
| 200 | caTissue CORE | 1d? | 2006-05-01 | 2006-05-01 |  | Mark |
| 201 | SNP | 1d? | 2006-05-01 | 2006-05-01 |  | Mark |
| 202 | Tumor Registry | 1d? | 2006-05-01 | 2006-05-01 |  | Mark |
| 203 | **Real data** | 1d? | 2006-05-01 | 2006-05-01 |  | Chris; Mark |
| 204 | caTissue CORE | 1d? | 2006-05-01 | 2006-05-01 |  | Chris |
| 205 | CAE | 1d? | 2006-05-01 | 2006-05-01 |  | Mark |
| 206 | **Testing** | 1d? | 2006-05-01 | 2006-05-01 |  | Patrick |
| 207 | Integration tests | 1d? | 2006-05-01 | 2006-05-01 |  | Patrick |
| 208 | QA | 1d? | 2006-05-01 | 2006-05-01 |  | Raj |
| 209 | **Deliverables** | 1d? | 2006-05-01 | 2006-05-01 |  |  |
| 210 | **Silver compatibility** | 1d? | 2006-05-01 | 2006-05-01 |  | Bill |
| 211 | Semantic XMI | 1d? | 2006-05-01 | 2006-05-01 |  | Bill |
| 212 | CDE use report | 1d? | 2006-05-01 | 2006-05-01 |  | Bill |
| 213 | Architecture guide | 0.5d? | 2006-05-01 | 2006-05-01 |  | Ram; Patrick |
| 214 | Final use cases | 1d? | 2006-05-01 | 2006-05-01 |  | Patrick |
| 215 | Final requirements | 1d? | 2006-05-01 | 2006-05-01 |  | Patrick |
| 216 | Draft datasets | 1d? | 2006-05-01 | 2006-05-01 |  | Patrick |
| 217 | Final datasets | 1d? | 2006-05-01 | 2006-05-01 |  | Patrick |
| 266 | Extend model | 5d | 2006-05-08 | 2006-05-12 | 265 | Mark |

Changed:

| ID | Task | Start | Finish | Duration | Complete | Total float | Predecessors | Other |
| --- | --- | --- | --- | --- | --- | --- | --- | --- |
| 1 | **Phase I** |  |  |  | 43% → 51% |  |  |  |
| 19 | **Elaboration** |  |  |  | 42% → 57% |  |  |  |
| 20 | **Iteration 1** |  |  |  | 74% → 81% |  |  |  |
| 35 | **Tool installation** |  |  |  | 38% → 65% |  |  |  |
| 43 | **CAE** | 2006-06-05 A |  |  | 0% → 22% |  |  |  |
| 44 | Document CDE extension | 2006-06-05 A | 2006-06-09 A |  | 0% → 100% | 7.5d → none |  |  |
| 69 | **Iteration 2** |  |  |  | 9% → 31% |  |  |  |
| 93 | **Design develop and test distributed query engine architecture** | 2006-07-17 A |  |  | 0% → 75% |  |  |  |
| 95 | Code and Test | 2006-07-17 A | 2006-08-25 A |  | 0% → 100% | 0d → none |  |  |
| 96 | **Design, develop and test GUI** | 2006-07-17 A |  |  | 0% → 60% |  |  |  |
| 98 | Enhance prototype | 2006-07-17 A | 2006-08-25 A |  | 0% → 100% | 0d → none |  |  |
| 189 | Extend model | 2006-06-12 → 2006-05-01 (-42d) | 2006-06-16 → 2006-05-01 (-46d) | 5d → 1d? |  | 7.5d → 134d | 258 → none | resources Mark → Patrick |
| 218 | **Phase 2** |  |  |  |  |  |  | was named Phase II |
| 257 | **caTIES** | 2006-06-05 → 2006-05-01 (-35d) | 2006-07-05 → 2006-05-31 (-35d) |  |  | 7.5d → 112.5d |  |  |
| 258 | Document CDE extension | 2006-06-05 → 2006-05-01 (-35d) | 2006-06-09 → 2006-05-05 (-35d) |  |  | 7.5d → 112.5d |  |  |
| 259 | Extend model | 2006-07-24 → 2006-05-08 (-77d) | 2006-07-28 → 2006-05-12 (-77d) |  |  | 8.33d → 112.5d | 265 → 258 |  |
| 260 | Apply model to tool | 2006-06-19 → 2006-05-15 (-35d) | 2006-06-23 → 2006-05-19 (-35d) |  |  | 7.5d → 112.5d | 189 → 259 |  |
| 261 | Develop and Install data service | 2006-06-26 → 2006-05-22 (-35d) | 2006-06-28 → 2006-05-24 (-35d) |  |  | 7.5d → 112.5d |  |  |
| 262 | Install tool | 2006-06-28 → 2006-05-24 (-35d) | 2006-07-05 → 2006-05-31 (-35d) |  |  | 7.5d → 112.5d |  |  |
| 263 | **CTOM** | 2006-07-17 → 2006-05-01 (-77d) | 2006-08-15 → 2006-05-30 (-77d) |  |  | 8.33d → 113.33d |  |  |
| 264 | Evaluate CTOM for appropriate model and APIs per Risk 5 | 2006-07-17 → 2006-05-01 (-77d) | 2006-07-21 → 2006-05-05 (-77d) |  |  | 25d → 130d |  |  |
| 265 | Document CDE extension | 2006-07-17 → 2006-05-01 (-77d) | 2006-07-21 → 2006-05-05 (-77d) |  |  | 8.33d → 113.33d |  |  |
| 267 | Apply model to tool | 2006-07-31 → 2006-05-15 (-77d) | 2006-08-04 → 2006-05-19 (-77d) |  |  | 8.33d → 113.33d | 259 → 266 |  |
| 268 | Develop and Install data service | 2006-08-07 → 2006-05-22 (-77d) | 2006-08-08 → 2006-05-23 (-77d) |  |  | 8.33d → 113.33d |  |  |
| 269 | Install tool | 2006-08-08 → 2006-05-23 (-77d) | 2006-08-15 → 2006-05-30 (-77d) |  |  | 8.33d → 113.33d |  |  |

## Version 6 (saved 2006-09-20)

Note of the change: changed assignments, completed some tasks

Last finish stays 2006-11-03. Complete tasks 45 → 50.

Changed:

| ID | Task | Start | Finish | Complete | Total float | Other |
| --- | --- | --- | --- | --- | --- | --- |
| 173 | **Phase 1 wrapup** | 2006-05-01 A |  | 0% → 16% |  |  |
| 180 | **Domain services** | 2006-05-01 A |  | 0% → 31% |  |  |
| 181 | **Tumor Registry** | 2006-05-01 A |  | 0% → 33% |  |  |
| 182 | Implement database | 2006-05-01 A | 2006-05-01 A | 0% → 100% | 134d → none |  |
| 188 | **CAE** | 2006-05-01 A |  | 0% → 60% |  |  |
| 189 | Extend model | 2006-05-01 A | 2006-05-01 A | 0% → 100% | 134d → none | resources Patrick → Bill |
| 190 | Register extension | 2006-05-01 A | 2006-05-01 A | 0% → 100% | 134d → none | resources Srini → Bill |
| 191 | Implement database | 2006-05-01 A | 2006-05-01 A | 0% → 100% | 134d → none | resources Srini → Bill |
| 198 | **Test data** | 2006-05-01 A |  | 0% → 25% |  |  |
| 199 | CAE | 2006-05-01 A | 2006-05-01 A | 0% → 100% | 134d → none |  |
| 202 | Tumor Registry |  |  |  |  | resources Mark → Bill |

## Version 7 (saved 2006-09-27)

Note of the change: added dates for phase 1 wrapup

Last finish stays 2006-11-03. Complete tasks 50 → 51.

Added:

| ID | Task | Duration | Start | Finish | Constraint | Resources |
| --- | --- | --- | --- | --- | --- | --- |
| 180 | Error handling, code tightening | 5d | 2006-09-27 | 2006-10-03 | start no earlier than 2006-09-27 | Sanjeev |
| 181 | New extract with generalizations | 5d | 2006-09-27 | 2006-10-03 | start no earlier than 2006-09-27 | Sanjeev |
| 209 | Construct DCQL queries | 20d | 2006-09-27 | 2006-10-24 | start no earlier than 2006-09-27 | Sanjeev; Srini; Patrick |
| 221 | Draft API | 1d | 2006-10-31 | 2006-10-31 | start no earlier than 2006-10-31 |  |

Changed:

| ID | Task | Start | Finish | Duration | Complete | Total float | Predecessors | Other |
| --- | --- | --- | --- | --- | --- | --- | --- | --- |
| 173 | **Phase 1 wrapup** | 2006-05-01 A → 2006-09-11 A (+133d) | 2006-05-01 → 2006-10-31 (+183d) | 1d? → 37d | 16% → 23% | 134d → 3d |  |  |
| 174 | **GUI** | 2006-05-01 → 2006-09-20 A (+142d) | 2006-05-01 → 2006-10-05 (+157d) | 1d? → 12d | 0% → 52% | 134d → 21d |  |  |
| 175 | Discovery | 2006-05-01 → 2006-09-27 A (+149d) | 2006-05-01 → 2006-10-03 A (+155d) | 1d? → 5d | 0% → 100% | 134d → none |  | constraint none → start no earlier than 2006-09-27 |
| 176 | **Simplified GUI XML config** | 2006-05-01 → 2006-10-04 (+156d) | 2006-05-01 → 2006-10-05 (+157d) | 1d? → 2d |  | 134d → 21d |  |  |
| 177 | Tumor registry | 2006-05-01 → 2006-10-04 (+156d) | 2006-05-01 → 2006-10-05 (+157d) | 1d? → 2d |  | 134d → 21d |  | constraint none → start no earlier than 2006-10-04 |
| 178 | SNP | 2006-05-01 → 2006-10-04 (+156d) | 2006-05-01 → 2006-10-05 (+157d) | 1d? → 2d |  | 134d → 21d |  | constraint none → start no earlier than 2006-10-04 |
| 179 | Java webstart | 2006-05-01 → 2006-09-20 A (+142d) | 2006-05-01 → 2006-10-03 A (+155d) | 1d? → 10d | 0% → 100% | 134d → none |  | constraint none → start no earlier than 2006-09-20 |
| 182 | **Domain services** | 2006-05-01 A → 2006-09-11 A (+133d) | 2006-05-01 → 2006-10-19 (+171d) | 1d? → 29d |  | 134d → 11d |  |  |
| 183 | **Tumor Registry** | 2006-05-01 A → 2006-09-11 A (+133d) | 2006-05-01 → 2006-10-17 (+169d) | 1d? → 27d | 33% → 42% | 134d → 13d |  |  |
| 184 | Implement database | 2006-05-01 A → 2006-09-11 A (+133d) | 2006-05-01 A → 2006-09-15 A (+137d) | 1d? → 5d |  |  |  |  |
| 185 | Implement service | 2006-05-01 → 2006-10-09 (+161d) | 2006-05-01 → 2006-10-13 (+165d) | 1d? → 5d |  | 134d → 13d | none → 184 | constraint none → start no earlier than 2006-10-09 |
| 186 | Deployed | 2006-05-01 → 2006-10-16 (+168d) | 2006-05-01 → 2006-10-17 (+169d) | 1d? → 2d |  | 134d → 13d | none → 185 | constraint none → start no earlier than 2006-10-16 |
| 187 | **caTissue CORE** | 2006-05-01 → 2006-10-09 (+161d) | 2006-05-01 → 2006-10-17 (+169d) | 1d? → 7d |  | 134d → 13d |  |  |
| 188 | Install update | 2006-05-01 → 2006-10-09 (+161d) | 2006-05-01 → 2006-10-13 (+165d) | 1d? → 5d |  | 134d → 13d |  | constraint none → start no earlier than 2006-10-09 |
| 189 | Deployed | 2006-05-01 → 2006-10-16 (+168d) | 2006-05-01 → 2006-10-17 (+169d) | 1d? → 2d |  | 134d → 13d | none → 188 |  |
| 190 | **CAE** | 2006-05-01 A → 2006-09-11 A (+133d) | 2006-05-01 → 2006-10-19 (+171d) | 1d? → 29d | 60% → 53% | 134d → 11d |  | resources Srini; Patrick → Srini; Bill |
| 191 | Extend model | 2006-05-01 A → 2006-09-11 A (+133d) | 2006-05-01 A → 2006-09-15 A (+137d) | 1d? → 5d |  |  |  |  |
| 192 | Register extension | 2006-05-01 A → 2006-10-09 (+161d) | 2006-05-01 A → 2006-10-13 (+165d) | 1d? → 5d | 100% → 0% | none → 11d |  | constraint none → start no earlier than 2006-10-09 |
| 193 | Implement database | 2006-05-01 A → 2006-09-11 A (+133d) | 2006-05-01 A → 2006-09-15 A (+137d) | 1d? → 5d |  |  |  |  |
| 194 | Implement service | 2006-05-01 → 2006-10-16 (+168d) | 2006-05-01 → 2006-10-17 (+169d) | 1d? → 2d |  | 134d → 11d | none → 192 | constraint none → start no earlier than 2006-10-13 |
| 195 | Deployed | 2006-05-01 → 2006-10-18 (+170d) | 2006-05-01 → 2006-10-19 (+171d) | 1d? → 2d |  | 134d → 11d | none → 194 |  |
| 196 | **SNP** | 2006-05-01 → 2006-09-27 (+149d) | 2006-05-01 → 2006-10-11 (+163d) | 1d? → 11d |  | 134d → 17d |  |  |
| 197 | Install database | 2006-05-01 → 2006-09-27 (+149d) | 2006-05-01 → 2006-10-02 (+154d) | 1d? → 4d |  | 134d → 17d |  | constraint none → start no earlier than 2006-09-27 |
| 198 | Implement service | 2006-05-01 → 2006-10-03 (+155d) | 2006-05-01 → 2006-10-09 (+161d) | 1d? → 5d |  | 134d → 17d | none → 197 |  |
| 199 | Deploy | 2006-05-01 → 2006-10-10 (+162d) | 2006-05-01 → 2006-10-11 (+163d) | 1d? → 2d |  | 134d → 17d | none → 198 |  |
| 200 | **Test data** | 2006-05-01 A → 2006-09-20 A (+142d) | 2006-05-01 → 2006-10-16 (+168d) | 1d? → 19d |  | 134d → 14d |  |  |
| 201 | CAE | 2006-05-01 A → 2006-09-20 A (+142d) | 2006-05-01 A → 2006-09-26 A (+148d) | 1d? → 5d |  |  |  |  |
| 202 | caTissue CORE | 2006-05-01 → 2006-09-27 (+149d) | 2006-05-01 → 2006-10-03 (+155d) | 1d? → 5d |  | 134d → 23d |  | constraint none → start no earlier than 2006-09-27 |
| 203 | SNP | 2006-05-01 → 2006-10-10 (+162d) | 2006-05-01 → 2006-10-16 (+168d) | 1d? → 5d |  | 134d → 14d |  | constraint none → start no earlier than 2006-10-10 |
| 204 | Tumor Registry | 2006-05-01 → 2006-10-10 (+162d) | 2006-05-01 → 2006-10-16 (+168d) | 1d? → 5d |  | 134d → 14d |  | constraint none → start no earlier than 2006-10-10 |
| 205 | **Real data** | 2006-05-01 → 2006-09-27 (+149d) | 2006-05-01 → 2006-10-16 (+168d) | 1d? → 14d |  | 134d → 14d |  | resources Chris; Mark → Chris; Bill |
| 206 | caTissue CORE | 2006-05-01 → 2006-09-27 (+149d) | 2006-05-01 → 2006-09-29 (+151d) | 1d? → 3d |  | 134d → 25d |  | constraint none → start no earlier than 2006-09-27 |
| 207 | Tumor Registry | 2006-05-01 → 2006-10-10 (+162d) | 2006-05-01 → 2006-10-16 (+168d) | 1d? → 5d |  | 134d → 14d |  | was named CAE; constraint none → start no earlier than 2006-10-10; resources Mark → Bill |
| 208 | **Testing** | 2006-05-01 → 2006-09-27 (+149d) | 2006-05-01 → 2006-10-27 (+179d) | 1d? → 23d |  | 134d → 5d |  |  |
| 210 | Integration tests | 2006-05-01 → 2006-09-27 (+149d) | 2006-05-01 → 2006-10-10 (+162d) | 1d? → 10d |  | 134d → 18d |  | constraint none → start no earlier than 2006-09-27 |
| 211 | QA | 2006-05-01 → 2006-10-16 (+168d) | 2006-05-01 → 2006-10-27 (+179d) | 1d? → 10d |  | 134d → 5d |  | constraint none → start no earlier than 2006-10-16 |
| 212 | **Deliverables** | 2006-05-01 → 2006-10-31 (+183d) | 2006-05-01 → 2006-10-31 (+183d) | 1d? → 1d |  | 134d → 3d |  |  |
| 213 | **Silver compatibility** | 2006-05-01 → 2006-10-31 (+183d) | 2006-05-01 → 2006-10-31 (+183d) | 1d? → 1d |  | 134d → 3d |  |  |
| 214 | Semantic XMI | 2006-05-01 → 2006-10-31 (+183d) | 2006-05-01 → 2006-10-31 (+183d) | 1d? → 1d |  | 134d → 3d |  | constraint none → start no earlier than 2006-10-31 |
| 215 | CDE use report | 2006-05-01 → 2006-10-31 (+183d) | 2006-05-01 → 2006-10-31 (+183d) | 1d? → 1d |  | 134d → 3d |  | constraint none → start no earlier than 2006-10-31 |
| 216 | Architecture guide | 2006-05-01 → 2006-10-31 (+183d) | 2006-05-01 → 2006-10-31 (+183d) | 0.5d? → 1d |  | 134.5d → 3d |  | constraint none → start no earlier than 2006-10-31 |
| 217 | Final use cases | 2006-05-01 → 2006-10-31 (+183d) | 2006-05-01 → 2006-10-31 (+183d) | 1d? → 1d |  | 134d → 3d |  | constraint none → start no earlier than 2006-10-31 |
| 218 | Final requirements | 2006-05-01 → 2006-10-31 (+183d) | 2006-05-01 → 2006-10-31 (+183d) | 1d? → 1d |  | 134d → 3d |  | constraint none → start no earlier than 2006-10-31 |
| 219 | Draft datasets | 2006-05-01 → 2006-10-31 (+183d) | 2006-05-01 → 2006-10-31 (+183d) | 1d? → 1d |  | 134d → 3d |  | constraint none → start no earlier than 2006-10-31 |
| 220 | Final datasets | 2006-05-01 → 2006-10-31 (+183d) | 2006-05-01 → 2006-10-31 (+183d) | 1d? → 1d |  | 134d → 3d |  | constraint none → start no earlier than 2006-10-31 |

## Version 8 (saved 2006-10-04)

Note of the change: updated with latest info

Last finish stays 2006-11-03. Complete tasks 51 → 55.

Added:

| ID | Task | Duration | Start | Finish | Resources |
| --- | --- | --- | --- | --- | --- |
| 182 | Export results to file | 2d | 2006-05-01 A | 2006-05-02 A | Sanjeev |

Removed: 189 Deployed

Changed:

| ID | Task | Start | Finish | Duration | Complete | Total float | Other |
| --- | --- | --- | --- | --- | --- | --- | --- |
| 173 | **Phase 1 wrapup** | 2006-09-11 A → 2006-05-01 A (-133d) |  | 37d → 132d | 23% → 33% |  |  |
| 174 | **GUI** | 2006-09-20 A → 2006-05-01 A (-142d) |  | 12d → 114d | 52% → 71% |  |  |
| 181 | New extract with generalizations | 2006-09-27 A | 2006-10-03 A |  | 0% → 100% | 23d → none |  |
| 183 | **Domain services** |  |  |  | 31% → 51% |  |  |
| 186 | Implement service |  |  |  |  |  | resources Bill → Sanjeev |
| 188 | **caTissue CORE** |  | 2006-10-17 → 2006-10-13 (-4d) | 7d → 5d |  | 13d → 15d |  |
| 189 | Regen grid service |  |  |  |  | 13d → 15d | was named Install update |
| 196 | **SNP** | 2006-09-27 A |  |  | 0% → 82% |  |  |
| 197 | Install database | 2006-09-27 A | 2006-10-02 A |  | 0% → 100% | 17d → none |  |
| 198 | Implement service | 2006-10-03 A | 2006-10-09 A |  | 0% → 100% | 17d → none |  |
| 221 | Draft API |  |  |  |  |  | resources none → Patrick |

## Version 9 (saved 2006-10-11)

Last finish stays 2006-11-03. Complete tasks 55 → 61.

Changed:

| ID | Task | Start | Finish | Duration | Complete | Total float | Other |
| --- | --- | --- | --- | --- | --- | --- | --- |
| 173 | **Phase 1 wrapup** |  |  |  | 33% → 44% |  |  |
| 183 | **Domain services** |  |  |  | 51% → 77% |  |  |
| 184 | **Tumor Registry** |  |  |  | 42% → 83% |  |  |
| 186 | Implement service | 2006-10-09 A | 2006-10-13 A |  | 0% → 100% | 13d → none |  |
| 188 | **caTissue CORE** | 2006-10-09 A | 2006-10-13 A |  | 0% → 100% | 15d → none |  |
| 189 | Regen grid service | 2006-10-09 A | 2006-10-13 A |  | 0% → 100% | 15d → none |  |
| 190 | **CAE** |  |  |  | 53% → 63% |  |  |
| 194 | Implement service | 2006-10-16 A | 2006-10-17 A |  | 0% → 100% | 11d → none |  |
| 200 | **Test data** |  |  |  | 25% → 29% |  |  |
| 203 | SNP |  | 2006-10-16 → 2006-10-12 (-4d) | 5d → 2.5d |  | 14d → 16.5d | resources Mark → Ramakrishna; Srini |
| 212 | **Deliverables** | 2006-10-31 A |  |  | 0% → 38% |  |  |
| 217 | Final use cases | 2006-10-31 A | 2006-10-31 A |  | 0% → 100% | 3d → none |  |
| 218 | Final requirements | 2006-10-31 A | 2006-10-31 A |  | 0% → 100% | 3d → none |  |
| 221 | Draft API | 2006-10-31 A | 2006-10-31 A |  | 0% → 100% | 3d → none |  |

## Version 10 (saved 2006-10-18)

Last finish stays 2006-11-03. Complete tasks 61 → 64.

Changed:

| ID | Task | Start | Finish | Complete | Total float |
| --- | --- | --- | --- | --- | --- |
| 173 | **Phase 1 wrapup** |  |  | 44% → 55% |  |
| 183 | **Domain services** |  |  | 77% → 81% |  |
| 190 | **CAE** |  |  | 63% → 74% |  |
| 195 | Deployed | 2006-10-18 A | 2006-10-19 A | 0% → 100% | 11d → none |
| 200 | **Test data** |  |  | 29% → 57% |  |
| 202 | caTissue CORE | 2006-09-27 A | 2006-10-03 A | 0% → 100% | 23d → none |
| 208 | **Testing** | 2006-09-27 A |  | 0% → 25% |  |
| 210 | Integration tests | 2006-09-27 A | 2006-10-10 A | 0% → 100% | 18d → none |

## Version 11 (saved 2006-11-14)

Note of the change: updated with comments from ram

Last finish 2006-11-03 → 2007-05-01 (+179d). Complete tasks 64 → 78.

Added:

| ID | Task | Duration | Start | Finish | Predecessors | Resources |
| --- | --- | --- | --- | --- | --- | --- |
| 223 | **Inception** | 14d | 2006-11-01 | 2006-11-20 |  |  |
| 224 | Update use case document | 14d | 2006-11-01 | 2006-11-20 |  | Srini; Sanjeev; Bill |
| 225 | Update SRS | 14d | 2006-11-01 | 2006-11-20 |  | Srini; Sanjeev; Bill |
| 226 | Update design document | 14d | 2006-11-01 | 2006-11-20 |  | Srini; Sanjeev; Bill |
| 227 | Complete draft technical guide | 14d | 2006-11-01 | 2006-11-20 |  | Srini; Sanjeev; Bill |
| 228 | **Elaboration** | 30d | 2006-11-21 | 2007-01-01 | 223 |  |
| 229 | **Iteration 1** | 10d | 2006-11-21 | 2006-12-04 |  |  |
| 230 | **Basic GUI** | 10d | 2006-11-21 | 2006-12-04 |  | Sanjeev |
| 231 | Migrate to caGrid 1.0 DQE | 10d | 2006-11-21 | 2006-12-04 |  | Sanjeev |
| 232 | Advanced GUI | 10d | 2006-11-21 | 2006-12-04 |  | Sanjeev |
| 234 | Migrate to caGrid 1.0 | 10d | 2006-11-21 | 2006-12-04 |  | Srini |
| 235 | **Extend DQE infrastructure** | 10d | 2006-11-21 | 2006-12-04 |  | Srini |
| 236 | Implement new predicates | 10d | 2006-11-21 | 2006-12-04 |  | Srini |
| 237 | Modify schema to allow comparison between attributes | 10d | 2006-11-21 | 2006-12-04 |  | Srini |
| 238 | Modify schema to add construct for return values | 10d | 2006-11-21 | 2006-12-04 |  | Srini |
| 239 | **Data services** | 10d | 2006-11-21 | 2006-12-04 |  | Srini; Bill |
| 240 | Migrate to caGrid 1.0 | 10d | 2006-11-21 | 2006-12-04 |  | Srini |
| 241 | **Extend data service infrastructe** | 10d | 2006-11-21 | 2006-12-04 |  | Srini |
| 242 | Implement new predicates | 10d | 2006-11-21 | 2006-12-04 |  | Srini |
| 243 | Implement comparison between attributes | 10d | 2006-11-21 | 2006-12-04 |  | Srini |
| 244 | Implement construct for return values | 10d | 2006-11-21 | 2006-12-04 |  | Srini |
| 246 | Create domain model | 10d | 2006-11-21 | 2006-12-04 |  | Bill |
| 247 | **Datasets** | 10d | 2006-11-21 | 2006-12-04 |  | Mark; Chris |
| 248 | Begin getting GEMS for data | 10d | 2006-11-21 | 2006-12-04 |  | Mark |
| 249 | Begin getting lab data | 10d | 2006-11-21 | 2006-12-04 |  | Mark; Chris |
| 250 | Get pathology reports | 10d | 2006-11-21 | 2006-12-04 |  | Mark; Chris |
| 251 | Logging | 10d | 2006-11-21 | 2006-12-04 |  |  |
| 253 | Security | 10d | 2006-11-21 | 2006-12-04 |  |  |
| 254 | **Query sharing** | 10d | 2006-11-21 | 2006-12-04 |  | Bill |
| 255 | Create UML model | 10d | 2006-11-21 | 2006-12-04 |  | Bill |
| 256 | Create database and hibernate mappings | 10d | 2006-11-21 | 2006-12-04 |  | Bill |
| 257 | **Iteration 2** | 20d | 2006-12-05 | 2007-01-01 | 229 |  |
| 258 | **Basic GUI** | 20d | 2006-12-05 | 2007-01-01 |  | Sanjeev |
| 259 | Implement interface for groups (AND/OR) | 20d | 2006-12-05 | 2007-01-01 |  | Sanjeev |
| 260 | Implement group DCQL generation (AND/OR) | 20d | 2006-12-05 | 2007-01-01 |  | Sanjeev |
| 261 | **Advanced GUI** | 20d | 2006-12-05 | 2007-01-01 |  | Sanjeev |
| 262 | Investigate reuse of filters | 20d | 2006-12-05 | 2007-01-01 |  | Sanjeev |
| 263 | Implement interface for groups (AND/OR) | 20d | 2006-12-05 | 2007-01-01 |  | Sanjeev |
| 264 | Implement group DCQL generation (AND/OR) | 20d | 2006-12-05 | 2007-01-01 |  | Sanjeev |
| 265 | **Data services** | 20d | 2006-12-05 | 2007-01-01 |  | Bill; Srini |
| 266 | Create silver compatibility review submission package | 5d | 2006-12-05 | 2006-12-11 |  | Bill |
| 267 | Generate CDE use report | 20d | 2006-12-05 | 2007-01-01 |  | Bill |
| 268 | **caTIES** | 20d | 2006-12-05 | 2007-01-01 |  | Bill |
| 269 | Annotate XMI | 20d | 2006-12-05 | 2007-01-01 |  | Bill |
| 270 | Register model | 20d | 2006-12-05 | 2007-01-01 |  | Bill |
| 271 | Implement service | 20d | 2006-12-05 | 2007-01-01 |  | Bill |
| 272 | Add secure communication | 20d | 2006-12-05 | 2007-01-01 |  | Srini |
| 273 | **Datasets** | 20d | 2006-12-05 | 2007-01-01 |  | Mark |
| 274 | Get MAW3 CAE data | 20d | 2006-12-05 | 2007-01-01 |  | Mark |
| 275 | Migrate into data service | 20d | 2006-12-05 | 2007-01-01 |  | Mark |
| 276 | **DQE** | 20d | 2006-12-05 | 2007-01-01 |  | Srini |
| 277 | Implement comparison between attributes | 20d | 2006-12-05 | 2007-01-01 |  | Srini |
| 278 | Implement construct for return values | 20d | 2006-12-05 | 2007-01-01 |  | Srini |
| 279 | **Security** | 20d | 2006-12-05 | 2007-01-01 |  | Srini |
| 280 | Setup IdP service | 20d | 2006-12-05 | 2007-01-01 |  | Srini |
| 281 | Evaluate authorization | 20d | 2006-12-05 | 2007-01-01 |  | Srini |
| 282 | **Query sharing** | 20d | 2006-12-05 | 2007-01-01 |  | Bill |
| 283 | Generate XML schemas | 20d | 2006-12-05 | 2007-01-01 |  | Bill |
| 284 | Create grid skeleton | 20d | 2006-12-05 | 2007-01-01 |  | Bill |
| 285 | **Construction** | 64d | 2007-01-02 | 2007-03-30 | 228 |  |
| 286 | **Iteration 1** | 33d | 2007-01-02 | 2007-02-15 |  |  |
| 287 | **Basic GUI** | 33d | 2007-01-02 | 2007-02-15 |  | Sanjeev |
| 288 | Implement GUI features | 33d | 2007-01-02 | 2007-02-15 |  | Sanjeev |
| 289 | **Advanced GUI** | 33d | 2007-01-02 | 2007-02-15 |  | Sanjeev |
| 290 | Implement GUI features | 33d | 2007-01-02 | 2007-02-15 |  | Sanjeev |
| 291 | **Data services** | 33d | 2007-01-02 | 2007-02-15 |  |  |
| 292 | Implement authorization | 33d | 2007-01-02 | 2007-02-15 |  | Srini |
| 293 | **Iteration 2** | 31d | 2007-02-16 | 2007-03-30 | 286 |  |
| 294 | **Basic GUI** | 31d | 2007-02-16 | 2007-03-30 |  | Sanjeev |
| 295 | Implement GUI features | 31d | 2007-02-16 | 2007-03-30 |  | Sanjeev |
| 296 | Implement 508 compliance | 31d | 2007-02-16 | 2007-03-30 |  | Sanjeev |
| 297 | **Advanced GUI** | 31d | 2007-02-16 | 2007-03-30 |  | Sanjeev |
| 298 | Implement GUI features | 31d | 2007-02-16 | 2007-03-30 |  | Sanjeev |
| 299 | **Transition** | 22d | 2007-04-02 | 2007-05-01 | 285 |  |
| 300 | Documentation | 22d | 2007-04-02 | 2007-05-01 |  |  |
| 301 | System testing | 22d | 2007-04-02 | 2007-05-01 |  |  |

Removed: 223 Management; 224 Use case definition; 225 Dataset migration; 226 Tool installation; 228 Dataset preparation; 229 Tumor registry; 230 CDE document; 231 Dataset deidentification; 232 Expose database; 233 GEMS Illumina; 234 CDE document; 235 Dataset deidentification; 236 Expose database; 237 MAW3; 238 Document CDE usage; 239 Dataset deidentification; 240 Expose database; 241 DSR; 242 CDE document; 243 Dataset deidentification; 244 Expose database; 245 Implement security; 246 Integrate Duke IdP with IdP grid service; 247 Basic testing; 248 Domain services; 249 Implement discovery test; 250 Implement performance test; 251 Distributed query engine; 252 Implement discovery test; 253 Implement performance test; 254 System testing; 255 Domain services; 256 Implement security test; 257 Implement metadata test; 259 Implement security test; 260 Implement metadata test; 262 Document CDE extension; 263 Extend model; 264 Apply model to tool; 265 Develop and Install data service; 266 Install tool; 267 CTOM; 268 Evaluate CTOM for appropriate model and APIs per Risk 5; 269 Document CDE extension; 270 Extend model; 271 Apply model to tool; 272 Develop and Install data service; 273 Install tool

Changed:

| ID | Task | Start | Finish | Duration | Complete | Total float | Predecessors | Other |
| --- | --- | --- | --- | --- | --- | --- | --- | --- |
| 173 | **Phase 1 wrapup** |  |  |  | 55% → 92% | 3d → 0d |  |  |
| 174 | **GUI** |  | 2006-10-05 A |  | 71% → 100% | 21d → none |  |  |
| 176 | **Simplified GUI XML config** | 2006-10-04 A | 2006-10-05 A |  | 0% → 100% | 21d → none |  |  |
| 177 | Tumor registry | 2006-10-04 A | 2006-10-05 A |  | 0% → 100% | 21d → none |  |  |
| 178 | SNP | 2006-10-04 A | 2006-10-05 A |  | 0% → 100% | 21d → none |  |  |
| 180 | Error handling, code tightening | 2006-09-27 A | 2006-10-03 A |  | 0% → 100% | 23d → none |  |  |
| 183 | **Domain services** |  | 2006-10-19 A |  | 81% → 100% | 11d → none |  |  |
| 184 | **Tumor Registry** |  | 2006-10-17 A |  | 83% → 100% | 13d → none |  |  |
| 187 | Deployed | 2006-10-16 A | 2006-10-17 A |  | 0% → 100% | 13d → none |  |  |
| 190 | **CAE** |  | 2006-10-19 A |  | 74% → 100% | 11d → none |  |  |
| 192 | Register extension | 2006-10-09 A | 2006-10-13 A |  | 0% → 100% | 15d → none |  |  |
| 196 | **SNP** |  | 2006-10-11 A |  | 82% → 100% | 17d → none |  |  |
| 199 | Deploy | 2006-10-10 A | 2006-10-11 A |  | 0% → 100% | 17d → none |  |  |
| 200 | **Test data** |  | 2006-10-16 A |  | 57% → 100% | 14d → none |  |  |
| 203 | SNP | 2006-10-10 A | 2006-10-12 A |  | 0% → 100% | 16.5d → none |  |  |
| 204 | Tumor Registry | 2006-10-10 A | 2006-10-16 A |  | 0% → 100% | 14d → none |  |  |
| 205 | **Real data** | 2006-09-27 A | 2006-10-16 A |  | 0% → 100% | 14d → none |  |  |
| 206 | caTissue CORE | 2006-09-27 A | 2006-09-29 A |  | 0% → 100% | 25d → none |  |  |
| 207 | Tumor Registry | 2006-10-10 A | 2006-10-16 A |  | 0% → 100% | 14d → none |  |  |
| 208 | **Testing** |  |  |  | 25% → 75% | 5d → 2d |  |  |
| 209 | Construct DCQL queries | 2006-09-27 A | 2006-10-24 A |  | 0% → 100% | 8d → none |  |  |
| 212 | **Deliverables** |  |  |  | 38% → 75% | 3d → 0d |  |  |
| 213 | **Silver compatibility** | 2006-10-31 A |  |  | 0% → 50% | 3d → 0d |  |  |
| 214 | Semantic XMI | 2006-10-31 A | 2006-10-31 A |  | 0% → 100% | 3d → none |  |  |
| 219 | Draft datasets | 2006-10-31 A | 2006-10-31 A |  | 0% → 100% | 3d → none |  |  |
| 220 | Final datasets | 2006-10-31 A | 2006-10-31 A |  | 0% → 100% | 3d → none |  |  |
| 222 | **Phase 2** | 2006-05-01 → 2006-11-01 (+184d) | 2006-07-11 → 2007-05-01 (+294d) | 52d? → 130d |  | 83d → 0d | none → 173 |  |
| 233 | **DQE** | 2006-05-01 → 2006-11-21 (+204d) | 2006-05-05 → 2006-12-04 (+213d) | 5d → 10d |  | 130d → 0d |  | resources none → Srini |
| 245 | **caTIES** | 2006-05-01 → 2006-11-21 (+204d) | 2006-05-31 → 2006-12-04 (+187d) | 22.5d → 10d |  | 112.5d → 0d |  | resources Bioinformatics; Mark → Bill |
| 252 | Testing | 2006-05-01 → 2006-11-21 (+204d) | 2006-05-01 → 2006-12-04 (+217d) | 1d? → 10d |  | 134d → 0d |  |  |

## Version 12 (saved 2006-11-15)

Note of the change: updated with feedback from tcon

Last finish stays 2007-05-01.

Added:

| ID | Task | Duration | Start | Finish | Resources |
| --- | --- | --- | --- | --- | --- |
| 229 | **Project planning** | 10d | 2006-11-21 | 2006-12-04 | Patrick; Ram |
| 230 | Update risk matrix | 10d | 2006-11-21 | 2006-12-04 | Patrick; Ram |
| 252 | Begin getting CAE data | 10d | 2006-11-21 | 2006-12-04 | Mark; Chris |
| 257 | Update use case document with query sharing | 10d | 2006-11-21 | 2006-12-04 | Bill |
| 275 | **caTissue CORE** | 20d | 2006-12-05 | 2007-01-01 | Bill |
| 276 | Migrate data | 20d | 2006-12-05 | 2007-01-01 | Bill |
| 277 | Migrate service | 20d | 2006-12-05 | 2007-01-01 | Bill |

Removed: 226 Update design document

Changed:

| ID | Task | Finish | Duration | Total float | Other |
| --- | --- | --- | --- | --- | --- |
| 242 | **Extend data service infrastructure** |  |  |  | was named Extend data service infrastructe |
| 270 | Generate CDE use report | 2007-01-01 → 2006-12-11 (-21d) | 20d → 5d | 0d → 15d |  |
| 281 | Migrate into CAE database/service |  |  |  | was named Migrate into data service |
| 285 | **Security** |  |  |  | resources Srini → Srini; Patrick |
| 286 | Setup IdP service | 2007-01-01 → 2006-12-18 (-14d) | 20d → 10d | 0d → 10d | resources Srini → Srini; Patrick |

## Version 13 (saved 2006-12-06)

Note of the change: completed tasks for iteration 1

Last finish stays 2007-05-01. Complete tasks 78 → 94.

Added:

| ID | Task | Duration | Start | Finish | Resources |
| --- | --- | --- | --- | --- | --- |
| 270 | caTIES | 10d | 2006-12-05 | 2006-12-18 | Bill |

Removed: 246 caTIES

Changed:

| ID | Task | Start | Finish | Duration | Complete | Total float |
| --- | --- | --- | --- | --- | --- | --- |
| 222 | **Phase 2** | 2006-11-01 A |  |  | 0% → 19% |  |
| 223 | **Inception** | 2006-11-01 A |  |  | 0% → 67% | 0d → 10d |
| 224 | Update use case document | 2006-11-01 A | 2006-11-20 A |  | 0% → 100% | 0d → none |
| 225 | Update SRS | 2006-11-01 A | 2006-11-20 A |  | 0% → 100% | 0d → none |
| 227 | **Elaboration** | 2006-11-21 A |  |  | 0% → 23% |  |
| 228 | **Iteration 1** | 2006-11-21 A | 2006-12-04 A |  | 0% → 100% | 0d → none |
| 229 | **Project planning** | 2006-11-21 A | 2006-12-04 A |  | 0% → 100% | 0d → none |
| 230 | Update risk matrix | 2006-11-21 A | 2006-12-04 A |  | 0% → 100% | 0d → none |
| 231 | **Basic GUI** | 2006-11-21 A | 2006-12-04 A |  | 0% → 100% | 0d → none |
| 232 | Migrate to caGrid 1.0 DQE | 2006-11-21 A | 2006-12-04 A |  | 0% → 100% | 0d → none |
| 233 | Advanced GUI | 2006-11-21 A | 2006-12-04 A |  | 0% → 100% | 0d → none |
| 234 | **DQE** | 2006-11-21 A | 2006-12-04 A |  | 0% → 100% | 0d → none |
| 235 | Migrate to caGrid 1.0 | 2006-11-21 A | 2006-12-04 A |  | 0% → 100% | 0d → none |
| 236 | **Extend DQE infrastructure** | 2006-11-21 A | 2006-12-04 A |  | 0% → 100% | 0d → none |
| 237 | Modify schema to allow comparison between attributes | 2006-11-21 A | 2006-12-04 A |  | 0% → 100% | 0d → none |
| 238 | Modify schema to add construct for return values | 2006-11-21 A | 2006-12-04 A |  | 0% → 100% | 0d → none |
| 239 | **Data services** | 2006-11-21 A | 2006-12-04 A |  | 0% → 100% | 0d → none |
| 240 | Migrate to caGrid 1.0 | 2006-11-21 A | 2006-12-04 A |  | 0% → 100% | 0d → none |
| 241 | **Datasets** | 2006-11-21 A | 2006-12-04 A |  | 0% → 100% | 0d → none |
| 242 | Begin getting GEMS for data | 2006-11-21 A | 2006-12-04 A |  | 0% → 100% | 0d → none |
| 243 | Begin getting lab data | 2006-11-21 A | 2006-12-04 A |  | 0% → 100% | 0d → none |
| 244 | Begin getting CAE data | 2006-11-21 A | 2006-12-04 A |  | 0% → 100% | 0d → none |
| 245 | Logging | 2006-11-21 A | 2006-12-04 A |  | 0% → 100% | 0d → none |
| 246 | Testing | 2006-11-21 A | 2006-12-04 A |  | 0% → 100% | 0d → none |
| 247 | Security | 2006-11-21 A | 2006-12-04 A |  | 0% → 100% | 0d → none |
| 248 | **Query sharing** | 2006-11-21 A | 2006-12-04 A |  | 0% → 100% | 0d → none |
| 249 | Update use case document with query sharing | 2006-11-21 A | 2006-12-04 A |  | 0% → 100% | 0d → none |
| 259 | Create silver compatibility review submission package |  | 2006-12-11 → 2006-12-15 (+4d) | 5d → 9d |  | 15d → 11d |
| 260 | Generate CDE use report |  | 2006-12-11 → 2006-12-15 (+4d) | 5d → 9d |  | 15d → 11d |
| 262 | Create domain model | 2006-11-21 → 2006-12-05 (+14d) | 2006-12-04 → 2006-12-18 (+14d) |  |  | 0d → 10d |
| 271 | **Extend data service infrastructure** | 2006-11-21 → 2006-12-05 (+14d) | 2006-12-04 → 2006-12-18 (+14d) |  |  | 0d → 10d |
| 272 | Implement new predicates | 2006-11-21 → 2006-12-05 (+14d) | 2006-12-04 → 2006-12-18 (+14d) |  |  | 0d → 10d |
| 273 | Implement comparison between attributes | 2006-11-21 → 2006-12-05 (+14d) | 2006-12-04 → 2006-12-18 (+14d) |  |  | 0d → 10d |
| 274 | Implement construct for return values | 2006-11-21 → 2006-12-05 (+14d) | 2006-12-04 → 2006-12-18 (+14d) |  |  | 0d → 10d |
| 276 | Get pathology reports | 2006-11-21 → 2006-12-05 (+14d) | 2006-12-04 → 2006-12-18 (+14d) |  |  | 0d → 10d |
| 280 | Implement new predicates | 2006-11-21 → 2006-12-05 (+14d) | 2006-12-04 → 2006-12-18 (+14d) |  |  | 0d → 10d |
| 287 | Create UML model | 2006-11-21 → 2006-12-05 (+14d) | 2006-12-04 → 2006-12-18 (+14d) |  |  | 0d → 10d |
| 288 | Create database and hibernate mappings | 2006-11-21 → 2006-12-05 (+14d) | 2006-12-04 → 2006-12-18 (+14d) |  |  | 0d → 10d |

## Version 14 (saved 2006-12-13)

Note of the change: *** empty log message ***

Last finish stays 2007-05-01.

Added:

| ID | Task | Duration | Start | Finish | Resources |
| --- | --- | --- | --- | --- | --- |
| 270 | Implement first pass at processor for return values | 20d | 2006-12-05 | 2007-01-01 | Srini |
| 280 | Hook into IdP service | 20d | 2007-01-02 | 2007-01-29 | Sanjeev |
| 281 | Finish implementation of interface for groups (AND/OR) | 20d | 2007-01-02 | 2007-01-29 | Sanjeev |
| 282 | Finish implementation of group DCQL generation (AND/OR) | 20d | 2007-01-02 | 2007-01-29 | Sanjeev |
| 283 | Implement interface for query sharing | 20d | 2007-01-02 | 2007-01-29 | Sanjeev |
| 284 | Investigate rebuilding simple gui from saved query | 20d | 2007-01-02 | 2007-01-29 | Sanjeev |
| 286 | Finish implementation of interface for groups (AND/OR) | 20d | 2007-01-02 | 2007-01-29 | Sanjeev |
| 287 | Finish implementation of group DCQL generation (AND/OR) | 20d | 2007-01-02 | 2007-01-29 | Sanjeev |
| 289 | Migrate to caGrid 1.0 release | 33d | 2007-01-02 | 2007-02-15 | Srini; Sanjeev |
| 299 | **DQE** | 20d | 2007-01-02 | 2007-01-29 | Srini |
| 306 | **Logging** | 20d | 2007-01-02 | 2007-01-29 | Bill |
| 307 | Investigate logging | 20d | 2007-01-02 | 2007-01-29 | Bill |
| 312 | Implement path report reviewing | 31d | 2007-02-16 | 2007-03-30 | Sanjeev |
| 313 | Investiage need to upload of MRNs for querying | 31d | 2007-02-16 | 2007-03-30 | Sanjeev |
| 316 | Implement right-click mouse items | 31d | 2007-02-16 | 2007-03-30 | Sanjeev |
| 317 | **Security** | 31d | 2007-02-16 | 2007-03-30 | Srini |
| 318 | Implement authorization | 31d | 2007-02-16 | 2007-03-30 | Srini |
| 319 | **Datasets** | 31d | 2007-02-16 | 2007-03-30 | Bill |
| 320 | Implement external data system | 31d | 2007-02-16 | 2007-03-30 | Bill |

Removed: 270 caTIES; 294 Implement GUI features; 296 Implement GUI features

Changed:

| ID | Task | Start | Finish | Duration | Complete | Total float | Other |
| --- | --- | --- | --- | --- | --- | --- | --- |
| 222 | **Phase 2** |  |  |  | 19% → 14% |  |  |
| 227 | **Elaboration** |  |  |  | 23% → 32% |  |  |
| 258 | **Data services** |  | 2007-01-01 → 2006-12-18 (-14d) | 20d → 10d |  | 0d → 10d |  |
| 279 | **Basic GUI** |  | 2007-02-15 → 2007-01-29 (-17d) | 33d → 20d |  | 0d → 13d |  |
| 285 | **Advanced GUI** |  | 2007-02-15 → 2007-01-29 (-17d) | 33d → 20d |  | 0d → 13d |  |
| 288 | **Data services** |  |  |  |  |  | resources none → Srini; Sanjeev |
| 291 | **caTIES** | 2006-12-05 → 2007-01-02 (+28d) | 2007-01-01 → 2007-01-29 (+28d) |  |  | 0d → 13d |  |
| 292 | Create domain model | 2006-12-05 → 2007-01-02 (+28d) | 2006-12-18 → 2007-01-15 (+28d) |  |  | 10d → 23d |  |
| 293 | Annotate XMI | 2006-12-05 → 2007-01-02 (+28d) | 2007-01-01 → 2007-01-29 (+28d) |  |  | 0d → 13d |  |
| 294 | Register model | 2006-12-05 → 2007-01-02 (+28d) | 2007-01-01 → 2007-01-29 (+28d) |  |  | 0d → 13d |  |
| 295 | Implement service | 2006-12-05 → 2007-01-02 (+28d) | 2007-01-01 → 2007-01-29 (+28d) |  |  | 0d → 13d |  |
| 296 | **caTissue CORE** | 2006-12-05 → 2007-01-02 (+28d) | 2007-01-01 → 2007-01-29 (+28d) |  |  | 0d → 13d |  |
| 297 | Migrate data | 2006-12-05 → 2007-01-02 (+28d) | 2007-01-01 → 2007-01-29 (+28d) |  |  | 0d → 13d |  |
| 298 | Migrate service | 2006-12-05 → 2007-01-02 (+28d) | 2007-01-01 → 2007-01-29 (+28d) |  |  | 0d → 13d |  |
| 300 | Implement new predicates | 2006-12-05 → 2007-01-02 (+28d) | 2006-12-18 → 2007-01-15 (+28d) |  |  | 10d → 23d |  |
| 301 | Implement comparison between attributes | 2006-12-05 → 2007-01-02 (+28d) | 2007-01-01 → 2007-01-29 (+28d) |  |  | 0d → 13d |  |
| 302 | **Security** | 2006-12-05 → 2007-01-02 (+28d) | 2007-01-01 → 2007-01-29 (+28d) |  |  | 0d → 13d |  |
| 303 | Add secure communication | 2006-12-05 → 2007-01-02 (+28d) | 2007-01-01 → 2007-01-29 (+28d) |  |  | 0d → 13d |  |
| 304 | Setup IdP service | 2006-12-05 → 2007-01-02 (+28d) | 2006-12-18 → 2007-01-15 (+28d) |  |  | 10d → 23d |  |
| 305 | Evaluate authorization | 2006-12-05 → 2007-01-02 (+28d) | 2007-01-01 → 2007-01-29 (+28d) |  |  | 0d → 13d |  |

## Version 15 (saved 2006-12-20)

Note of the change: *** empty log message ***

Last finish stays 2007-05-01. Complete tasks 94 → 101.

Changed:

| ID | Task | Start | Finish | Complete | Total float |
| --- | --- | --- | --- | --- | --- |
| 222 | **Phase 2** |  |  | 14% → 22% |  |
| 227 | **Elaboration** |  |  | 32% → 52% |  |
| 250 | **Iteration 2** | 2006-12-05 A |  | 0% → 30% |  |
| 258 | **Data services** | 2006-12-05 A |  | 0% → 38% |  |
| 259 | Create silver compatibility review submission package | 2006-12-05 A | 2006-12-15 A | 0% → 100% | 11d → none |
| 260 | Generate CDE use report | 2006-12-05 A | 2006-12-15 A | 0% → 100% | 11d → none |
| 265 | **Datasets** | 2006-12-05 A |  | 0% → 20% |  |
| 266 | Get pathology reports | 2006-12-05 A | 2006-12-18 A | 0% → 100% | 10d → none |
| 272 | **Query sharing** | 2006-12-05 A | 2007-01-01 A | 0% → 100% | 0d → none |
| 273 | Create UML model | 2006-12-05 A | 2006-12-18 A | 0% → 100% | 10d → none |
| 274 | Create database and hibernate mappings | 2006-12-05 A | 2006-12-18 A | 0% → 100% | 10d → none |
| 275 | Generate XML schemas | 2006-12-05 A | 2007-01-01 A | 0% → 100% | 0d → none |
| 276 | Create grid skeleton | 2006-12-05 A | 2007-01-01 A | 0% → 100% | 0d → none |

## Version 16 (saved 2007-02-20)

Note of the change: *** empty log message ***

Last finish stays 2007-05-01. Complete tasks 101 → 115.

Added:

| ID | Task | Duration | Start | Finish | Predecessors | Resources |
| --- | --- | --- | --- | --- | --- | --- |
| 278 | **Query sharing** | 1d? | 2007-01-02 A | 2007-01-02 A |  |  |
| 279 | Complete query sharing | 1d? | 2007-01-02 A | 2007-01-02 A |  |  |
| 284 | Implement AND/OR across services | 5d | 2007-02-16 | 2007-02-22 |  |  |
| 290 | Implement DCQL generation | 20d | 2007-02-16 | 2007-03-15 |  | Sanjeev |
| 291 | **Distributed query** | 35d | 2007-02-16 | 2007-04-05 |  | Srini |
| 292 | Finish implementation of AND/OR | 10d | 2007-02-16 | 2007-03-01 |  | Srini |
| 293 | Harden implementation of return attributes | 10d | 2007-02-16 | 2007-03-01 |  | Srini |
| 294 | Implement new predicates? | 10d | 2007-03-02 | 2007-03-15 | 293 | Srini |
| 300 | **Data services** | 25d | 2007-02-16 A | 2007-03-22 |  | Srini; Sanjeev |
| 309 | Migrate pathology reports into caTIES | 33d | 2007-02-16 | 2007-04-03 |  | Mark |
| 310 | Migrate SNP data into caIntegrator | 33d | 2007-02-16 | 2007-04-03 |  | Mark |
| 313 | Training module | 18d | 2007-04-06 | 2007-05-01 |  | Mark |
| 314 | Installation guide | 18d | 2007-04-06 | 2007-05-01 |  | Sanjeev |
| 315 | End user guide | 18d | 2007-04-06 | 2007-05-01 |  | Bill |
| 316 | Administration guide | 18d | 2007-04-06 | 2007-05-01 |  | Srini |
| 317 | Release notes | 18d | 2007-04-06 | 2007-05-01 |  | Srini |
| 318 | Case study | 18d | 2007-04-06 | 2007-05-01 |  | Patrick |

Removed: 254 Advanced GUI; 255 Investigate reuse of filters; 256 Implement interface for groups (AND/OR); 257 Implement group DCQL generation (AND/OR); 262 Implement new predicates; 285 Advanced GUI; 286 Finish implementation of interface for groups (AND/OR); 287 Finish implementation of group DCQL generation (AND/OR); 290 Implement authorization; 296 caTissue CORE; 297 Migrate data; 298 Migrate service; 300 Implement new predicates; 302 Security; 305 Evaluate authorization; 306 Logging; 307 Investigate logging; 310 Implement GUI features; 315 Implement GUI features; 316 Implement right-click mouse items; 320 Implement external data system

Changed:

| ID | Task | Start | Finish | Duration | Complete | Total float | Predecessors | Other |
| --- | --- | --- | --- | --- | --- | --- | --- | --- |
| 222 | **Phase 2** |  |  | 130d → 130d? | 22% → 59% |  |  |  |
| 223 | **Inception** |  | 2006-11-20 A |  | 67% → 100% | 10d → none |  |  |
| 226 | Complete draft technical guide | 2006-11-01 A | 2006-11-20 A |  | 0% → 100% | 10d → none |  |  |
| 227 | **Elaboration** |  | 2007-01-01 A |  | 52% → 100% | 0d → none |  |  |
| 250 | **Iteration 2** |  | 2007-01-01 A |  | 30% → 100% | 0d → none |  |  |
| 251 | **Basic GUI** | 2006-12-05 A | 2007-01-01 A |  | 0% → 100% | 0d → none |  |  |
| 252 | Implement interface for groups (AND/OR) | 2006-12-05 A | 2007-01-01 A |  | 0% → 100% | 0d → none |  |  |
| 253 | Implement group DCQL generation (AND/OR) | 2006-12-05 A | 2007-01-01 A |  | 0% → 100% | 0d → none |  |  |
| 254 | **Data services** |  | 2006-12-18 A |  | 38% → 100% | 10d → none |  |  |
| 257 | **Extend data service infrastructure** | 2006-12-05 A | 2006-12-18 A |  | 0% → 100% | 10d → none |  |  |
| 258 | Implement construct for return values | 2006-12-05 A | 2006-12-18 A |  | 0% → 100% | 10d → none |  |  |
| 259 | **Datasets** |  | 2007-01-01 → 2006-12-18 A (-14d) | 20d → 10d | 20% → 100% | 0d → none |  |  |
| 261 | **DQE** | 2006-12-05 A | 2007-01-01 A |  | 0% → 100% | 0d → none |  |  |
| 262 | Implement first pass at processor for return values | 2006-12-05 A | 2007-01-01 A |  | 0% → 100% | 0d → none |  |  |
| 263 | Implement construct for return values | 2006-12-05 A | 2007-01-01 A |  | 0% → 100% | 0d → none |  |  |
| 269 | **Construction** | 2007-01-02 A | 2007-03-30 → 2007-04-05 (+6d) | 64d → 68d? | 0% → 40% |  |  |  |
| 270 | **Iteration 1** | 2007-01-02 A | 2007-02-15 A | 33d → 33d? | 0% → 100% | 0d → none |  |  |
| 271 | **Basic GUI** | 2007-01-02 A | 2007-01-29 A |  | 0% → 100% | 13d → none |  |  |
| 272 | Finish implementation of interface for groups (AND/OR) | 2007-01-02 A | 2007-01-29 A |  | 0% → 100% | 13d → none |  |  |
| 273 | Finish implementation of group DCQL generation (AND/OR) | 2007-01-02 A | 2007-01-29 A |  | 0% → 100% | 13d → none |  |  |
| 274 | Implement interface for query sharing | 2007-01-02 A | 2007-01-29 A |  | 0% → 100% | 13d → none |  |  |
| 275 | Investigate rebuilding simple gui from saved query | 2007-01-02 A | 2007-01-29 A |  | 0% → 100% | 13d → none |  |  |
| 276 | **Data services** | 2007-01-02 A | 2007-02-15 A |  | 0% → 100% | 0d → none |  |  |
| 277 | Migrate to caGrid 1.0 release | 2007-01-02 A | 2007-02-15 A |  | 0% → 100% | 0d → none |  |  |
| 280 | **DQE** | 2007-01-02 A | 2007-01-29 A |  | 0% → 100% | 13d → none |  |  |
| 281 | Implement return attributes | 2007-01-02 A | 2007-01-29 A |  | 0% → 100% | 13d → none |  | was named Implement comparison between attributes |
| 282 | **Iteration 2** | 2007-02-16 A | 2007-03-30 → 2007-04-05 (+6d) | 31d → 35d | 0% → 8% |  |  |  |
| 283 | **Basic GUI** |  | 2007-03-30 → 2007-03-29 (-1d) | 31d → 30d |  | 0d → 5d |  |  |
| 285 | Hook into IdP service | 2007-01-02 → 2007-02-23 (+52d) | 2007-01-29 → 2007-03-01 (+31d) | 20d → 5d |  | 13d → 5d | none → 284 |  |
| 286 | Implement 508 compliance | 2007-02-16 → 2007-03-02 (+14d) | 2007-03-30 → 2007-03-08 (-22d) | 31d → 5d |  | 0d → 5d | none → 285 |  |
| 287 | Implement path report reviewing | 2007-02-16 → 2007-03-09 (+21d) | 2007-03-30 → 2007-03-15 (-15d) | 31d → 5d |  | 0d → 5d | none → 286 |  |
| 288 | Implement upload of MRNs for querying | 2007-02-16 → 2007-03-16 (+28d) | 2007-03-30 → 2007-03-29 (-1d) | 31d → 10d |  | 0d → 5d | none → 287 | was named Investiage need to upload of MRNs for querying |
| 289 | **Advanced GUI** |  | 2007-03-30 → 2007-03-15 (-15d) | 31d → 20d |  | 0d → 15d |  |  |
| 295 | Implement comparison between attributes | 2006-12-05 → 2007-03-16 (+101d) | 2006-12-18 → 2007-04-05 (+108d) | 10d → 15d |  | 10d → 0d | none → 294 |  |
| 296 | **Security** |  | 2007-03-30 → 2007-03-22 (-8d) | 31d → 25d |  | 0d → 10d |  |  |
| 297 | Add secure communication | 2007-01-02 → 2007-02-16 (+45d) | 2007-01-29 → 2007-02-22 (+24d) | 20d → 5d |  | 13d → 10d |  |  |
| 298 | Setup IdP service | 2007-01-02 → 2007-02-23 (+52d) | 2007-01-15 → 2007-03-01 (+45d) | 10d → 5d |  | 23d → 10d | none → 297 |  |
| 299 | Implement authorization | 2007-02-16 → 2007-03-02 (+14d) | 2007-03-30 → 2007-03-22 (-8d) | 31d → 15d |  | 0d → 10d | none → 298 |  |
| 301 | **caTIES** | 2007-01-02 → 2007-02-16 (+45d) | 2007-01-29 → 2007-03-22 (+52d) | 20d → 25d |  | 13d → 10d |  |  |
| 302 | Create domain model | 2007-01-02 → 2007-02-16 (+45d) | 2007-01-15 → 2007-02-22 (+38d) | 10d → 5d |  | 23d → 10d |  |  |
| 303 | Annotate XMI | 2007-01-02 → 2007-02-23 (+52d) | 2007-01-29 → 2007-03-01 (+31d) | 20d → 5d |  | 13d → 10d | none → 302 |  |
| 304 | Register model | 2007-01-02 → 2007-03-02 (+59d) | 2007-01-29 → 2007-03-15 (+45d) | 20d → 10d |  | 13d → 10d | none → 303 |  |
| 305 | Implement service | 2007-01-02 → 2007-03-16 (+73d) | 2007-01-29 → 2007-03-22 (+52d) | 20d → 5d |  | 13d → 10d | none → 304 |  |
| 306 | **Datasets** | 2007-02-16 A | 2007-03-30 → 2007-04-03 (+4d) | 31d → 33d | 0% → 18% | 0d → 2d |  |  |
| 307 | Get MAW3 CAE data | 2006-12-05 → 2007-02-16 A (+73d) | 2007-01-01 → 2007-03-01 A (+59d) | 20d → 10d | 0% → 100% | 0d → none |  |  |
| 308 | Migrate into CAE database/service | 2006-12-05 → 2007-02-16 A (+73d) | 2007-01-01 → 2007-04-03 (+92d) | 20d → 33d | 0% → 30% | 0d → 2d | none → 307 |  |
| 311 | **Transition** | 2007-04-02 → 2007-04-06 (+4d) |  | 22d → 18d |  |  |  |  |
| 312 | **Documentation** | 2007-04-02 → 2007-04-06 (+4d) |  | 22d → 18d |  |  |  |  |
| 319 | System testing | 2007-04-02 → 2007-04-06 (+4d) |  | 22d → 18d |  |  |  |  |

## Version 17 (saved 2007-02-21)

Note of the change: *** empty log message ***

Last finish 2007-05-01 → 2007-05-08 (+7d). Complete tasks 115 → 194.

Added:

| ID | Task | Duration | Start | Finish | Predecessors | Resources |
| --- | --- | --- | --- | --- | --- | --- |
| 286 | **Implement drop-downs for filter values** | 10d | 2007-02-23 | 2007-03-08 | 284 | Sanjeev |
| 287 | Implement enumerated value domain drop-downs | 5d | 2007-02-23 | 2007-03-01 |  | Sanjeev |
| 288 | Implement distinct value drop-downs | 5d | 2007-03-02 | 2007-03-08 | 287 | Sanjeev |
| 289 | Harden AND/OR (also across services) | 5d | 2007-03-09 | 2007-03-15 | 286 | Sanjeev |
| 292 | Implement path report viewing | 3d | 2007-03-26 | 2007-03-28 | 291 | Sanjeev |
| 293 | Finish AND/OR | 5d | 2007-03-29 | 2007-04-04 | 292 | Sanjeev |
| 303 | Setup gridgrouper | 5d | 2007-03-02 | 2007-03-08 | 302 | Srini |
| 316 | Change MRN format | 33d | 2007-02-16 | 2007-04-03 |  | Mark |
| 325 | Powerpoint | 17d | 2007-04-16 | 2007-05-08 |  | Patrick |

Removed: 284 Implement AND/OR across services; 287 Implement path report reviewing

Changed:

| ID | Task | Start | Finish | Complete | Total float |
| --- | --- | --- | --- | --- | --- |
| 1 | **Phase I** |  | 2006-11-03 A | 51% → 100% | 127d → none |
| 19 | **Elaboration** |  | 2006-08-25 A | 57% → 100% | 127d → none |
| 20 | **Iteration 1** |  | 2006-07-14 A | 81% → 100% | 0d → none |
| 35 | **Tool installation** |  | 2006-07-05 A | 65% → 100% | 7.5d → none |
| 43 | **CAE** |  | 2006-07-05 A | 22% → 100% | 7.5d → none |
| 45 | Extend model | 2006-06-12 A | 2006-06-16 A | 0% → 100% | 7.5d → none |
| 46 | Apply model to tool | 2006-06-19 A | 2006-06-23 A | 0% → 100% | 7.5d → none |
| 47 | Develop and Install data service | 2006-06-26 A | 2006-06-28 A | 0% → 100% | 7.5d → none |
| 48 | Install tool | 2006-06-28 A | 2006-07-05 A | 0% → 100% | 7.5d → none |
| 49 | **Develop API for non-caBIG systems (Tumor Registry)** |  | 2006-06-30 A | 30% → 100% | 10d → none |
| 51 | Perform O/R mapping using Hibernate | 2006-06-05 A | 2006-06-23 A | 0% → 100% | 15d → none |
| 52 | Perform semantic annotation | 2006-06-05 A | 2006-06-23 A | 0% → 100% | 10d → none |
| 53 | Generate API using caCORE SDK | 2006-06-26 A | 2006-06-30 A | 0% → 100% | 10d → none |
| 62 | **Basic testing** |  | 2006-06-09 A | 50% → 100% | 25d → none |
| 65 | **Graphical user interface** | 2006-06-05 A | 2006-06-09 A | 0% → 100% | 25d → none |
| 66 | Create draft QA test plan | 2006-06-05 A | 2006-06-09 A | 0% → 100% | 25d → none |
| 69 | **Iteration 2** |  | 2006-08-25 A | 31% → 100% | 127d → none |
| 70 | **Final use case document** |  | 2006-07-28 A | 0% → 100% | 147d → none |
| 71 | Finalize problem scenarios | 2006-07-17 A | 2006-07-21 A | 0% → 100% | 20d → none |
| 72 | Finalize use cases |  | 2006-07-28 A | 0% → 100% | 20d → none |
| 73 | **Final requirements and specifications document** | 2006-07-17 A | 2006-08-04 A | 0% → 100% | 142d → none |
| 74 | Finalize requirements | 2006-07-17 A | 2006-07-21 A | 0% → 100% | 15d → none |
| 75 | Finalize traceability matrix | 2006-07-24 A | 2006-07-28 A | 0% → 100% | 15d → none |
| 76 | Finalize UML | 2006-07-31 A | 2006-08-04 A | 0% → 100% | 15d → none |
| 77 | Draft dataset document (final) | 2006-07-17 A | 2006-07-28 A | 0% → 100% | 32d → none |
| 79 | **Tool installation** | 2006-07-17 A | 2006-08-16 A | 0% → 100% | 134.5d → none |
| 80 | **caIntegrator** | 2006-07-17 A | 2006-08-16 A | 0% → 100% | 134.5d → none |
| 81 | Document CDE extension | 2006-07-17 A | 2006-07-21 A | 0% → 100% | 7.5d → none |
| 82 | Extend model | 2006-07-24 A | 2006-07-28 A | 0% → 100% | 7.5d → none |
| 83 | Apply model to tool | 2006-07-31 A | 2006-08-04 A | 0% → 100% | 7.5d → none |
| 84 | Develop and Install data service | 2006-08-07 A | 2006-08-09 A | 0% → 100% | 136.5d → none |
| 85 | Install tool | 2006-08-09 A | 2006-08-16 A | 0% → 100% | 7.5d → none |
| 86 | **Complete API development for non-caBIG sytems** | 2006-07-17 A | 2006-08-11 A | 0% → 100% | 137d → none |
| 87 | Enhance UML domain model | 2006-07-17 A | 2006-08-11 A | 0% → 100% | 10d → none |
| 88 | Complete O/R mapping | 2006-07-17 A | 2006-08-11 A | 0% → 100% | 139d → none |
| 89 | Complete semantic annotation | 2006-07-17 A | 2006-07-28 A | 0% → 100% | 10d → none |
| 90 | Generate API using caCORE SDK | 2006-07-31 A | 2006-08-11 A | 0% → 100% | 139d → none |
| 91 | Implement security | 2006-07-17 A | 2006-07-25 A | 0% → 100% | 152.33d → none |
| 92 | Develop data services for caBIG/non-caBIG systems | 2006-08-07 A | 2006-08-09 A | 0% → 100% | 141.5d → none |
| 93 | **Design develop and test distributed query engine architecture** |  | 2006-08-25 A | 75% → 100% | 127d → none |
| 94 | Enhance UML artifacts | 2006-07-17 A | 2006-07-28 A | 0% → 100% | 149d → none |
| 96 | **Design, develop and test GUI** |  | 2006-08-25 A | 60% → 100% | 127d → none |
| 97 | Enhance UML artifacts | 2006-07-17 A | 2006-08-11 A | 0% → 100% | 139d → none |
| 99 | **System testing** |  | 2006-08-11 A | 31% → 100% | 137d → none |
| 101 | **Domain services** | 2006-07-17 A | 2006-08-04 A | 0% → 100% | 142d → none |
| 102 | Translate use cases into queries | 2006-07-17 A | 2006-07-28 A | 0% → 100% | 15d → none |
| 103 | Implement base data test | 2006-07-31 A | 2006-08-04 A | 0% → 100% | 15d → none |
| 104 | **Distributed query engine** | 2006-07-17 A | 2006-08-04 A | 0% → 100% | 142d → none |
| 105 | Translate use cases into queries | 2006-07-17 A | 2006-07-28 A | 0% → 100% | 15d → none |
| 106 | Implement base data test | 2006-07-31 A | 2006-08-04 A | 0% → 100% | 15d → none |
| 107 | **Graphical user interface** | 2006-07-17 A | 2006-08-04 A | 0% → 100% | 142d → none |
| 108 | Final QA test plan | 2006-07-17 A | 2006-08-04 A | 0% → 100% | 15d → none |
| 109 | **Construction** | 2006-08-28 A | 2006-10-20 A | 0% → 100% | 127d → none |
| 110 | **Iteration 1** | 2006-08-28 A | 2006-09-22 A | 0% → 100% | 127d → none |
| 111 | Final dataset document (draft) | 2006-08-28 A | 2006-09-22 A | 0% → 100% | 12d → none |
| 112 | **Dataset preparation** | 2006-08-28 A | 2006-09-22 A | 0% → 100% | 127d → none |
| 113 | Construct demo datasets | 2006-08-28 A | 2006-09-22 A | 0% → 100% | 12d → none |
| 114 | Enhance data services for caBIG/non-caBIG systems | 2006-08-28 A | 2006-09-01 A | 0% → 100% | 27d → none |
| 115 | Implement distributed query engine | 2006-08-28 A | 2006-09-22 A | 0% → 100% | 12d → none |
| 116 | **Implement GUI** | 2006-08-28 A | 2006-09-15 A | 0% → 100% | 132d → none |
| 117 | Implement simplified GUI | 2006-08-28 A | 2006-09-15 A | 0% → 100% | 134d → none |
| 118 | **Testing** | 2006-08-28 A | 2006-09-22 A | 0% → 100% | 127d → none |
| 119 | **Domain services** | 2006-08-28 A | 2006-09-22 A | 0% → 100% | 127d → none |
| 120 | Implement data test | 2006-08-28 A | 2006-09-22 A | 0% → 100% | 12d → none |
| 121 | **Distributed query engine** | 2006-08-28 A | 2006-09-22 A | 0% → 100% | 127d → none |
| 122 | Implement data test | 2006-08-28 A | 2006-09-22 A | 0% → 100% | 12d → none |
| 123 | **Graphical user interface** | 2006-08-28 A | 2006-08-31 A | 0% → 100% | 143.25d → none |
| 124 | Perform QA tests | 2006-08-28 A | 2006-08-31 A | 0% → 100% | 28.25d → none |
| 125 | **Iteration 2** | 2006-09-25 A | 2006-10-20 A | 0% → 100% | 127d → none |
| 126 | Final dataset document (final) | 2006-09-25 A | 2006-10-13 A | 0% → 100% | 17d → none |

| ID | Task | Start | Finish | Duration | Complete | Total float | Predecessors | Other |
| --- | --- | --- | --- | --- | --- | --- | --- | --- |
| 127 | **Construct demo datasets** | 2006-09-25 A | 2006-10-06 A |  | 0% → 100% | 137d → none |  |  |
| 128 | Construct tumor registry dataset | 2006-09-25 A | 2006-09-29 A |  | 0% → 100% | 22d → none |  |  |
| 129 | Construct GEMS Illumina dataset | 2006-10-02 A | 2006-10-06 A |  | 0% → 100% | 22d → none |  |  |
| 130 | Complete distributed query engine | 2006-09-25 A | 2006-10-20 A |  | 0% → 100% | 12d → none |  |  |
| 131 | **Complete GUI** | 2006-09-25 A | 2006-10-06 A |  | 0% → 100% | 137d → none |  |  |
| 132 | Complete simplified GUI | 2006-09-25 A | 2006-10-06 A |  | 0% → 100% | 22d → none |  |  |
| 133 | Create GUI installer | 2006-09-25 A | 2006-09-29 A |  | 0% → 100% | 27d → none |  |  |
| 134 | Develop draft technical architecture guide | 2006-10-02 A | 2006-10-13 A |  | 0% → 100% | 17d → none |  |  |
| 135 | **Deployment** | 2006-09-25 A | 2006-09-29 A |  | 0% → 100% | 142d → none |  |  |
| 136 | Deploy public services | 2006-09-25 A | 2006-09-29 A |  | 0% → 100% | 27d → none |  |  |
| 137 | **System testing** | 2006-09-25 A | 2006-10-20 A |  | 0% → 100% | 127d → none |  |  |
| 138 | **Domain services** | 2006-09-25 A | 2006-10-20 A |  | 0% → 100% | 127d → none |  |  |
| 139 | Final testing report | 2006-09-25 A | 2006-10-20 A |  | 0% → 100% | 12d → none |  |  |
| 140 | **Distributed query engine** | 2006-09-25 A | 2006-10-20 A |  | 0% → 100% | 127d → none |  |  |
| 141 | Final testing report | 2006-09-25 A | 2006-10-20 A |  | 0% → 100% | 12d → none |  |  |
| 142 | **Graphical user interface** | 2006-09-25 A | 2006-10-20 A |  | 0% → 100% | 127d → none |  |  |
| 143 | Final testing report | 2006-09-25 A | 2006-10-20 A |  | 0% → 100% | 12d → none |  |  |
| 144 | **Transition** | 2006-10-23 A | 2006-11-03 A |  | 0% → 100% | 127d → none |  |  |
| 145 | Final testing | 2006-10-23 A | 2006-11-03 A |  | 0% → 100% | 12d → none |  |  |
| 146 | **Final documentation** | 2006-10-23 A | 2006-11-03 A |  | 0% → 100% | 127d → none |  |  |
| 147 | Complete technical architecture guide | 2006-10-23 A | 2006-11-03 A |  | 0% → 100% | 12d → none |  |  |
| 148 | **Meetings** | 2006-05-01 A | 2006-09-26 A |  | 0% → 100% | 155d → none |  |  |
| 149 | Project kickoff | 2006-05-01 A | 2006-05-01 A |  | 0% → 100% | 133d → none |  |  |
| 150 | First F2F | 2006-05-24 A | 2006-05-25 A |  | 0% → 100% | 116d → none |  |  |
| 151 | Second F2F | 2006-09-25 A | 2006-09-26 A |  | 0% → 100% | 28d → none |  |  |
| 152 | **Deliverables** | 2006-05-02 A | 2006-11-01 A |  | 0% → 100% | 129d → none |  |  |
| 153 | Submit project management plan | 2006-06-01 A | 2006-06-01 A |  | 0% → 100% | 111d → none |  |  |
| 154 | Submit communications plan | 2006-06-01 A | 2006-06-01 A |  | 0% → 100% | 111d → none |  |  |
| 155 | Submit risk management matrix | 2006-06-01 A | 2006-06-01 A |  | 0% → 100% | 111d → none |  |  |
| 156 | Submit draft use case document | 2006-07-03 A | 2006-07-03 A |  | 0% → 100% | 89d → none |  |  |
| 157 | Submit final use case document | 2006-08-01 A | 2006-08-01 A |  | 0% → 100% | 68d → none |  |  |
| 158 | Submit draft requirements and specifications document | 2006-06-01 A | 2006-06-01 A |  | 0% → 100% | 111d → none |  |  |
| 159 | Submit final requirements and specifications document | 2006-07-03 A | 2006-07-03 A |  | 0% → 100% | 89d → none |  |  |
| 160 | Submit draft UML model | 2006-08-01 A | 2006-08-01 A |  | 0% → 100% | 68d → none |  |  |
| 161 | Submit draft API | 2006-11-01 A | 2006-11-01 A |  | 0% → 100% | 2d → none |  |  |
| 162 | Submit XMI file | 2006-10-02 A | 2006-10-02 A |  | 0% → 100% | 24d → none |  |  |
| 163 | Submit CDE use report | 2006-11-01 A | 2006-11-01 A |  | 0% → 100% | 2d → none |  |  |
| 164 | Submit draft test approach | 2006-06-01 A | 2006-06-01 A |  | 0% → 100% | 111d → none |  |  |
| 165 | Submit final test approach | 2006-07-03 A | 2006-07-03 A |  | 0% → 100% | 89d → none |  |  |
| 166 | Submit draft datasets | 2006-08-01 A | 2006-08-01 A |  | 0% → 100% | 68d → none |  |  |
| 167 | Submit final datasets | 2006-11-01 A | 2006-11-01 A |  | 0% → 100% | 2d → none |  |  |
| 168 | Submit draft prototype code | 2006-08-01 A | 2006-08-01 A |  | 0% → 100% | 68d → none |  |  |
| 169 | Submit final prototype code | 2006-11-01 A | 2006-11-01 A |  | 0% → 100% | 2d → none |  |  |
| 170 | Submit testing report for draft prototype | 2006-08-01 A | 2006-08-01 A |  | 0% → 100% | 68d → none |  |  |
| 171 | Submit testing report for final prototype | 2006-11-01 A | 2006-11-01 A |  | 0% → 100% | 2d → none |  |  |
| 172 | Submit technical/architectural guide | 2006-05-02 A | 2006-05-02 A |  | 0% → 100% | 133d → none |  |  |
| 173 | **Phase 1 wrapup** |  | 2006-10-31 A |  | 92% → 100% | 76.3d → none |  |  |
| 208 | **Testing** |  | 2006-10-27 A |  | 75% → 100% | 78.3d → none |  |  |
| 211 | QA | 2006-10-16 A | 2006-10-27 A |  | 0% → 100% | 5d → none |  |  |
| 212 | **Deliverables** |  | 2006-10-31 A |  | 75% → 100% | 76.3d → none |  |  |
| 213 | **Silver compatibility** |  | 2006-10-31 A |  | 50% → 100% | 76.3d → none |  |  |
| 215 | CDE use report | 2006-10-31 A | 2006-10-31 A |  | 0% → 100% | 35.02d → none |  |  |
| 216 | Architecture guide | 2006-10-31 A | 2006-10-31 A |  | 0% → 100% | 35.02d → none |  |  |
| 222 | **Phase 2** |  | 2007-05-01 → 2007-05-08 (+7d) | 130d? → 135d | 59% → 58% |  |  |  |
| 269 | **Construction** |  | 2007-04-05 → 2007-04-13 (+8d) | 68d? → 74d | 40% → 41% |  |  |  |
| 270 | **Iteration 1** |  |  | 33d? → 33d |  |  |  |  |
| 278 | **Query sharing** |  | 2007-01-02 A → 2007-01-15 A (+13d) | 1d? → 10d |  |  |  |  |
| 279 | Complete query sharing |  | 2007-01-02 A → 2007-01-15 A (+13d) | 1d? → 10d |  |  |  |  |
| 282 | **Iteration 2** |  | 2007-04-05 → 2007-04-13 (+8d) | 35d → 41d |  |  |  |  |
| 283 | **GUI** |  | 2007-03-29 → 2007-04-13 (+15d) | 30d → 41d |  | 5d → 0d |  | was named Basic GUI |
| 284 | **Advanced GUI** |  | 2007-03-15 → 2007-02-22 (-21d) | 20d → 5d |  | 15d → 0d |  |  |
| 285 | Implement DCQL generation |  | 2007-03-15 → 2007-02-22 (-21d) | 20d → 5d |  | 15d → 0d |  |  |
| 290 | Hook into IdP service | 2007-02-23 → 2007-03-16 (+21d) | 2007-03-01 → 2007-03-20 (+19d) | 5d → 3d |  | 5d → 0d | Implement AND/OR across services → 289 |  |
| 291 | Implement 508 compliance | 2007-03-02 → 2007-03-21 (+19d) | 2007-03-08 → 2007-03-23 (+15d) | 5d → 3d |  | 5d → 0d |  |  |
| 294 | Implement upload of MRNs for querying | 2007-03-16 → 2007-04-05 (+20d) | 2007-03-29 → 2007-04-13 (+15d) | 10d → 7d |  | 5d → 0d | Implement path report reviewing → 293 |  |
| 295 | **Distributed query** |  | 2007-04-05 → 2007-03-15 (-21d) | 35d → 20d |  | 0d → 21d |  |  |
| 297 | Finish implementation of AND/OR | 2007-02-16 → 2007-03-02 (+14d) | 2007-03-01 → 2007-03-15 (+14d) |  |  | 25d → 21d | none → 296 |  |
| 298 | Implement new predicates (e.g. fulltext) | 2007-03-02 → 2007-03-15 (+13d) |  | 10d → 0d |  | 0d → 21d | 296 → 297 | was named Implement new predicates? |
| 299 | Implement comparison between attributes | 2007-03-16 → 2007-03-15 (-1d) | 2007-04-05 → 2007-03-15 (-21d) | 15d → 0d |  | 0d → 21d |  |  |
| 300 | **Security** |  | 2007-03-22 → 2007-03-29 (+7d) | 25d → 30d |  | 10d → 11d |  |  |

| ID | Task | Start | Finish | Duration | Complete | Total float | Predecessors | Other |
| --- | --- | --- | --- | --- | --- | --- | --- | --- |
| 304 | Implement coarse-grained authorization | 2007-03-02 → 2007-03-09 (+7d) | 2007-03-22 → 2007-03-29 (+7d) |  |  | 10d → 11d | 302 → 303 | was named Implement authorization |
| 305 | **Data services** | 2007-02-16 A → 2007-02-16 |  |  |  | 10d → 16d |  |  |
| 311 | **Datasets** |  |  |  | 18% → 14% | 2d → 8d |  | resources Bill → Bill; Mark |
| 317 | **Transition** | 2007-04-06 → 2007-04-16 (+10d) | 2007-05-01 → 2007-05-08 (+7d) | 18d → 17d |  |  |  |  |
| 318 | **Documentation** | 2007-04-06 → 2007-04-16 (+10d) | 2007-05-01 → 2007-05-08 (+7d) | 18d → 17d |  |  |  |  |
| 319 | Training module | 2007-04-06 → 2007-04-16 (+10d) | 2007-05-01 → 2007-05-08 (+7d) | 18d → 17d |  |  |  |  |
| 320 | Installation guide | 2007-04-06 → 2007-04-16 (+10d) | 2007-05-01 → 2007-05-08 (+7d) | 18d → 17d |  |  |  |  |
| 321 | End user guide | 2007-04-06 → 2007-04-16 (+10d) | 2007-05-01 → 2007-05-08 (+7d) | 18d → 17d |  |  |  |  |
| 322 | Administration guide | 2007-04-06 → 2007-04-16 (+10d) | 2007-05-01 → 2007-05-08 (+7d) | 18d → 17d |  |  |  |  |
| 323 | Release notes | 2007-04-06 → 2007-04-16 (+10d) | 2007-05-01 → 2007-05-08 (+7d) | 18d → 17d |  |  |  |  |
| 324 | Case study | 2007-04-06 → 2007-04-16 (+10d) | 2007-05-01 → 2007-05-08 (+7d) | 18d → 17d |  |  |  |  |
| 326 | System testing | 2007-04-06 → 2007-04-16 (+10d) | 2007-05-01 → 2007-05-08 (+7d) | 18d → 17d |  |  |  | resources none → Everyone |

## Version 18 (saved 2007-02-28)

Note of the change: *** empty log message ***

Last finish stays 2007-05-08. Complete tasks 194 → 197.

Added:

| ID | Task | Duration | Start | Finish | Constraint | Resources |
| --- | --- | --- | --- | --- | --- | --- |
| 286 | Disable return attributes for tissue specimen | 3d | 2007-02-28 | 2007-03-02 | start no earlier than 2007-02-28 | Sanjeev |
| 307 | Change Castor mappings for collections | 3d | 2007-02-28 | 2007-03-02 | start no earlier than 2007-02-28 | Srini |

Removed: 307 Create domain model; 308 Annotate XMI; 309 Register model

Changed:

| ID | Task | Start | Finish | Duration | Complete | Total float | Predecessors | Other |
| --- | --- | --- | --- | --- | --- | --- | --- | --- |
| 222 | **Phase 2** |  |  |  | 58% → 62% |  |  |  |
| 269 | **Construction** |  |  |  | 41% → 48% |  |  |  |
| 282 | **Iteration 2** |  |  |  | 8% → 18% |  |  |  |
| 283 | **GUI** | 2007-02-16 A |  |  | 0% → 11% |  |  |  |
| 284 | **Advanced GUI** | 2007-02-16 A | 2007-02-22 A |  | 0% → 100% | 0d → none |  |  |
| 285 | Implement DCQL generation | 2007-02-16 A | 2007-02-22 A |  | 0% → 100% | 0d → none |  |  |
| 296 | **Distributed query** | 2007-02-16 A |  |  | 0% → 99% |  |  |  |
| 297 | Harden implementation of return attributes | 2007-02-16 A | 2007-03-01 A |  | 0% → 100% | 21d → none |  |  |
| 298 | Finish implementation of AND/OR | 2007-03-02 A | 2007-03-15 A |  | 0% → 100% | 21d → none |  |  |
| 306 | **Data services** | 2007-02-16 → 2007-02-26 A (+10d) | 2007-03-22 → 2007-03-09 (-13d) | 25d → 10d |  | 16d → 25d |  |  |
| 308 | **caTIES** | 2007-02-16 → 2007-02-26 (+10d) | 2007-03-22 → 2007-03-09 (-13d) | 25d → 10d |  | 16d → 25d |  |  |
| 309 | Implement service | 2007-03-16 → 2007-02-26 (-18d) | 2007-03-22 → 2007-03-09 (-13d) | 5d → 10d |  | 16d → 25d | Register model → none | constraint none → start no earlier than 2007-02-26 |

## Version 19 (saved 2007-03-08)

Note of the change: *** empty log message ***

Last finish stays 2007-05-08. Complete tasks 197 → 198.

Added:

| ID | Task | Duration | Start | Finish | Constraint | Resources |
| --- | --- | --- | --- | --- | --- | --- |
| 306 | **Query sharing** | 5d | 2007-03-19 | 2007-03-23 |  | Bill |
| 307 | Display filters of found query in text form | 5d | 2007-03-19 | 2007-03-23 | start no earlier than 2007-03-19 | Bill |

Changed:

| ID | Task | Start | Finish | Complete | Total float |
| --- | --- | --- | --- | --- | --- |
| 269 | **Construction** |  |  | 48% → 50% |  |
| 282 | **Iteration 2** |  |  | 18% → 22% |  |
| 308 | **Data services** |  |  | 0% → 77% |  |
| 310 | **caTIES** | 2007-02-26 A | 2007-03-09 A | 0% → 100% | 25d → none |
| 311 | Implement service | 2007-02-26 A | 2007-03-09 A | 0% → 100% | 25d → none |
