# translational_duke

How a schedule from MS Project changed from version to version. A marks actual dates.

## Version 1 (saved 2006-05-03)

| ID | WBS | Task | Duration | Start | Finish | Predecessors | Total float | Constraint |
| --- | --- | --- | --- | --- | --- | --- | --- | --- |
| 1 | 1 | **Phase I** | 133d | 2006-05-01 | 2006-11-01 |  | 0d |  |
| 2 | 1.1 | **Meetings** | 107d | 2006-05-01 | 2006-09-26 |  | 26d |  |
| 3 |  | Project kickoff | 1d | 2006-05-01 | 2006-05-01 |  | 131d |  |
| 4 |  | First F2F | 2d | 2006-05-24 | 2006-05-25 |  | 114d | finish no earlier than 2006-05-25 |
| 5 |  | Second F2F | 2d | 2006-09-25 | 2006-09-26 |  | 26d | start no earlier than 2006-09-25 |
| 6 | 1.2 | **Management** | 24d | 2006-05-01 | 2006-06-01 |  | 109d |  |
| 7 |  | Install MS Project | 10d | 2006-05-01 | 2006-05-12 |  | 123d |  |
| 8 |  | Draft project management plan | 22d | 2006-05-03 | 2006-06-01 |  | 109d | finish no earlier than 2006-06-01 |
| 9 |  | Draft communications plan | 11d | 2006-05-18 | 2006-06-01 |  | 109d | finish no earlier than 2006-06-01 |
| 10 |  | Draft risk management matrix | 11d | 2006-05-18 | 2006-06-01 |  | 109d | finish no earlier than 2006-06-01 |
| 11 |  | Draft test plan | 11d | 2006-05-18 | 2006-06-01 |  | 109d | finish no earlier than 2006-06-01 |
| 12 |  | Setup GForge | 1d | 2006-05-08 | 2006-05-08 |  | 122d | start no earlier than 2006-05-08 |
| 13 |  | Setup development environment | 5d | 2006-05-09 | 2006-05-15 | 12 | 122d | finish no earlier than 2006-05-15 |
| 14 | 1.2.8 | **Setup testbed** | 11d | 2006-05-01 | 2006-05-15 |  | 122d |  |
| 15 |  | Purchase testbed | 10d | 2006-05-01 | 2006-05-12 |  | 122d |  |
| 16 |  | Add testbed to backup cycle | 1d | 2006-05-15 | 2006-05-15 | 15 | 122d |  |
| 17 |  | Image testbed after basic environment is set up | 1d | 2006-05-15 | 2006-05-15 | 15 | 122d |  |
| 18 | 1.3 | **Use case definition** | 47d | 2006-05-24 | 2006-07-27 |  | 47d |  |
| 19 |  | Define problem scenarios | 2d | 2006-05-24 | 2006-05-25 |  | 47d | finish no earlier than 2006-05-25 |
| 20 |  | Help draft use case document | 45d | 2006-05-26 | 2006-07-27 | 19 | 69d | start no earlier than 2006-05-01 |
| 21 |  | Help draft requirements and sepcifications | 45d | 2006-05-26 | 2006-07-27 | 19 | 69d | finish no earlier than 2006-06-30 |
| 22 | 1.4 | **Dataset preparation** | 17d | 2006-05-26 | 2006-06-19 | 19 | 47d |  |
| 23 | 1.4.1 | **Dataset acquisition** | 7d | 2006-05-26 | 2006-06-05 |  | 47d |  |
| 24 |  | Determine available datasets | 1d | 2006-05-26 | 2006-05-26 |  | 47d | finish no earlier than 2006-05-25 |
| 25 |  | Match datasets to use cases | 1d | 2006-05-29 | 2006-05-29 | 24 | 47d |  |
| 26 |  | Fill out IRB forms | 5d | 2006-05-30 | 2006-06-05 | 25 | 47d |  |
| 27 | 1.4.2 | **Pathology dataset** | 10d | 2006-06-06 | 2006-06-19 | 23 | 47d |  |
| 28 |  | Document CDE usage | 5d | 2006-06-06 | 2006-06-12 |  | 52d |  |
| 29 |  | Dataset deidentification | 10d | 2006-06-06 | 2006-06-19 |  | 47d |  |
| 30 |  | Expose database | 5d | 2006-06-06 | 2006-06-12 |  | 52d |  |
| 31 | 1.4.3 | **Clinical dataset** | 10d | 2006-06-06 | 2006-06-19 | 23 | 47d |  |
| 32 |  | CDE document | 5d | 2006-06-06 | 2006-06-12 |  | 52d |  |
| 33 |  | Dataset deidentification | 10d | 2006-06-06 | 2006-06-19 |  | 47d |  |
| 34 |  | Expose database | 5d | 2006-06-06 | 2006-06-12 |  | 52d |  |
| 35 | 1.4.4 | **Tissue bank dataset** | 10d | 2006-06-06 | 2006-06-19 | 23 | 47d |  |
| 36 |  | CDE document | 5d | 2006-06-06 | 2006-06-12 |  | 52d |  |
| 37 |  | Dataset deidentification | 10d | 2006-06-06 | 2006-06-19 |  | 47d |  |
| 38 |  | Expose database | 5d | 2006-06-06 | 2006-06-12 |  | 52d |  |
| 39 | 1.5 | **Tool installation** | 50d | 2006-06-20 | 2006-08-28 | 22 | 47d |  |
| 40 | 1.5.1 | **Pathology dataset** | 50d | 2006-06-20 | 2006-08-28 |  | 47d |  |
| 41 |  | Document CDE extension | 10d | 2006-06-20 | 2006-07-03 |  | 47d |  |
| 42 |  | Extend model | 10d | 2006-07-04 | 2006-07-17 | 41 | 47d |  |
| 43 |  | Apply model to tool | 10d | 2006-07-18 | 2006-07-31 | 42 | 47d |  |
| 44 |  | Install services | 10d | 2006-08-01 | 2006-08-14 | 43 | 47d |  |
| 45 |  | Install tool | 10d | 2006-08-15 | 2006-08-28 | 44 | 47d |  |
| 46 | 1.5.2 | **Clinical dataset** | 50d | 2006-06-20 | 2006-08-28 |  | 47d |  |
| 47 |  | Document CDE extension | 10d | 2006-06-20 | 2006-07-03 |  | 47d |  |
| 48 |  | Extend model | 10d | 2006-07-04 | 2006-07-17 | 47 | 47d |  |
| 49 |  | Apply model to tool | 10d | 2006-07-18 | 2006-07-31 | 48 | 47d |  |
| 50 |  | Install services | 10d | 2006-08-01 | 2006-08-14 | 49 | 47d |  |
| 51 |  | Install tool | 10d | 2006-08-15 | 2006-08-28 | 50 | 47d |  |
| 52 | 1.5.3 | **Tissue bank dataset** | 50d | 2006-06-20 | 2006-08-28 |  | 47d |  |
| 53 |  | Document CDE extension | 10d | 2006-06-20 | 2006-07-03 |  | 47d |  |
| 54 |  | Extend model | 10d | 2006-07-04 | 2006-07-17 | 53 | 47d |  |
| 55 |  | Apply model to tool | 10d | 2006-07-18 | 2006-07-31 | 54 | 47d |  |
| 56 |  | Install services | 10d | 2006-08-01 | 2006-08-14 | 55 | 47d |  |
| 57 |  | Install tool | 10d | 2006-08-15 | 2006-08-28 | 56 | 47d |  |
| 58 | 1.6 | **Deliverables** | 132d | 2006-05-02 | 2006-11-01 | 3 | 0d |  |
| 59 |  | Submit project management plan | 1d | 2006-06-01 | 2006-06-01 |  | 109d | start no earlier than 2006-06-01 |
| 60 |  | Submit communications plan | 1d | 2006-06-01 | 2006-06-01 |  | 109d | start no earlier than 2006-06-01 |
| 61 |  | Submit risk management matrix | 1d | 2006-06-01 | 2006-06-01 |  | 109d | start no earlier than 2006-06-01 |
| 62 |  | Submit draft use case document | 1d | 2006-07-03 | 2006-07-03 |  | 87d | start no earlier than 2006-07-03 |
| 63 |  | Submit final use case document | 1d | 2006-08-01 | 2006-08-01 |  | 66d | start no earlier than 2006-08-01 |
| 64 |  | Submit draft requirements and specifications document | 1d | 2006-06-01 | 2006-06-01 |  | 109d | start no earlier than 2006-06-01 |
| 65 |  | Submit final requirements and specifications document | 1d | 2006-07-03 | 2006-07-03 |  | 87d | start no earlier than 2006-07-03 |
| 66 |  | Submit draft UML model | 1d | 2006-08-01 | 2006-08-01 |  | 66d | start no earlier than 2006-08-01 |
| 67 |  | Submit draft API | 1d | 2006-11-01 | 2006-11-01 |  | 0d | start no earlier than 2006-11-01 |
| 68 |  | Submit XMI file | 1d | 2006-10-02 | 2006-10-02 |  | 22d | start no earlier than 2006-10-02 |
| 69 |  | Submit CDE use report | 1d | 2006-11-01 | 2006-11-01 |  | 0d | start no earlier than 2006-11-01 |
| 70 |  | Submit draft test approach | 1d | 2006-06-01 | 2006-06-01 |  | 109d | start no earlier than 2006-06-01 |

| ID | WBS | Task | Duration | Start | Finish | Predecessors | Total float | Constraint |
| --- | --- | --- | --- | --- | --- | --- | --- | --- |
| 71 |  | Submit final test approach | 1d | 2006-07-03 | 2006-07-03 |  | 87d | start no earlier than 2006-07-03 |
| 72 |  | Submit draft datasets | 1d | 2006-08-01 | 2006-08-01 |  | 66d | start no earlier than 2006-08-01 |
| 73 |  | Submit final datasets | 1d | 2006-11-01 | 2006-11-01 |  | 0d | start no earlier than 2006-11-01 |
| 74 |  | Submit draft prototype code | 1d | 2006-08-01 | 2006-08-01 |  | 66d | start no earlier than 2006-08-01 |
| 75 |  | Submit final prototype code | 1d | 2006-11-01 | 2006-11-01 |  | 0d | start no earlier than 2006-11-01 |
| 76 |  | Submit testing report for draft prototype | 1d | 2006-08-01 | 2006-08-01 |  | 66d | start no earlier than 2006-08-01 |
| 77 |  | Submit testing report for final prototype | 1d | 2006-11-01 | 2006-11-01 |  | 0d | start no earlier than 2006-11-01 |
| 78 |  | Submit technical/architectural guide | 1d | 2006-05-02 | 2006-05-02 |  | 131d |  |
| 79 | 1.7 | **Testing** | 30d | 2006-05-26 | 2006-07-06 |  | 84d |  |
| 80 |  | Define queries for use cases | 30d | 2006-05-26 | 2006-07-06 | 19 | 84d |  |
| 81 |  | Write unit tests for use cases | 30d | 2006-05-26 | 2006-07-06 | 19 | 84d |  |
| 82 | 2 | **Phase II** | 1d? | 2006-05-01 | 2006-05-01 |  | 132d |  |
| 83 |  | Management | 1d? | 2006-05-01 | 2006-05-01 |  | 132d |  |
| 84 |  | Use case definition | 1d? | 2006-05-01 | 2006-05-01 |  | 132d |  |
| 85 |  | Dataset migration | 1d? | 2006-05-01 | 2006-05-01 |  | 132d |  |
| 86 |  | Tool installation | 1d? | 2006-05-01 | 2006-05-01 |  | 132d |  |
| 87 |  | Testing | 1d? | 2006-05-01 | 2006-05-01 |  | 132d |  |

## Version 2 (saved 2006-05-17)

Note of the change: synchronized with SB project plan

Last finish stays 2006-11-01.

Added:

| ID | Task | Duration | Start | Finish | Predecessors | Constraint | Resources |
| --- | --- | --- | --- | --- | --- | --- | --- |
| 10 | Define initial problem scenerios | 25d | 2006-05-01 | 2006-06-02 |  |  | Patrick; Bob; Raj |
| 11 | Define initial use cases | 25d | 2006-05-01 | 2006-06-02 |  |  | Patrick; Bob; Raj |
| 12 | Define initial datasets | 25d | 2006-05-01 | 2006-06-02 |  |  | Patrick; Bob; Raj |
| 17 | **Elaboration** | 47d | 2006-06-05 | 2006-08-08 | 2 |  |  |
| 18 | **Iteration 1** | 30d | 2006-06-05 | 2006-07-14 |  |  |  |
| 19 | **Draft use case document** | 10d | 2006-06-05 | 2006-06-16 |  |  |  |
| 21 | Draft use cases | 8d | 2006-06-07 | 2006-06-16 | 20 | finish no earlier than 2006-06-01 | Patrick; Bob |
| 22 | **Draft requirements and specifications document** | 20d | 2006-06-19 | 2006-07-14 | 19 |  | Patrick |
| 23 | Translate use cases into requirements | 10d | 2006-06-19 | 2006-06-30 |  |  | Patrick |
| 24 | Create test traceability matrix | 5d | 2006-07-03 | 2006-07-07 | 23 |  | Patrick |
| 25 | Draft architecture UML diagrams | 20d | 2006-06-19 | 2006-07-14 |  |  | Patrick |
| 26 | Draft dataset document (draft) | 20d | 2006-06-05 | 2006-06-30 |  |  | Patrick; Bob; Mark |
| 54 | Setup testing environment | 5d | 2006-06-05 | 2006-06-09 |  |  | Patrick |
| 55 | **Domain services** | 10d | 2006-06-05 | 2006-06-16 |  |  | Patrick |
| 56 | Implement discovery test | 5d | 2006-06-05 | 2006-06-09 |  |  | Patrick |
| 57 | Implement performance test | 5d | 2006-06-12 | 2006-06-16 | 56 |  | Patrick |
| 58 | **Distributed query engine** | 10d | 2006-06-12 | 2006-06-23 | 54 |  | Patrick |
| 59 | Implement discovery test | 5d | 2006-06-12 | 2006-06-16 |  |  | Patrick |
| 60 | Implement performance test | 5d | 2006-06-19 | 2006-06-23 | 59 |  | Patrick |
| 61 | **Graphical user interface** | 10d | 2006-06-05 | 2006-06-16 |  |  | Mark |
| 62 | Create detailed GUI test plan | 10d | 2006-06-05 | 2006-06-16 |  |  | Mark |
| 63 | **Security integration** | 15d | 2006-06-05 | 2006-06-23 |  |  | Patrick; Jeff |
| 64 | Identify Duke IdP | 10d | 2006-06-05 | 2006-06-16 |  |  | Jeff |
| 65 | Integrate Dorian with Duke IdP | 15d | 2006-06-05 | 2006-06-23 |  |  | Patrick |
| 66 | **Iteration 2** | 32d | 2006-06-26 | 2006-08-08 | 65 |  |  |
| 67 | **Final use case document** | 10d | 2006-06-26 | 2006-07-07 |  |  | Patrick |
| 68 | Finalize problem scenarios | 5d | 2006-06-26 | 2006-06-30 |  |  | Patrick |
| 69 | Finalize use cases | 5d | 2006-07-03 | 2006-07-07 | 68 |  | Patrick |
| 70 | **Final requirements and specifications document** | 15d | 2006-06-26 | 2006-07-14 |  |  | Patrick |
| 71 | Finalize requirements | 5d | 2006-06-26 | 2006-06-30 |  |  | Patrick |
| 72 | Finalize traceability matrix | 5d | 2006-07-03 | 2006-07-07 | 71 |  | Patrick |
| 73 | Finalize UML | 5d | 2006-07-10 | 2006-07-14 | 72 |  | Patrick |
| 74 | Draft dataset document (final) | 10d | 2006-06-26 | 2006-07-07 |  |  | Patrick; Bob; Mark |
| 75 | **Dataset preparation** | 20d | 2006-07-12 | 2006-08-08 | 32, 36 |  | Mark |
| 80 | **Basic science dataset** | 20d | 2006-07-12 | 2006-08-08 |  |  | Mark |
| 81 | CDE document | 5d | 2006-07-12 | 2006-07-18 |  |  | Mark |
| 82 | Dataset deidentification | 10d | 2006-07-19 | 2006-08-01 | 81 |  | Mark |
| 83 | Expose database | 5d | 2006-08-02 | 2006-08-08 | 82 |  | Mark |
| 84 | **Tool installation** | 25d | 2006-06-26 | 2006-07-28 |  |  | Bioinformatics; Mark |
| 91 | **Basic science dataset** | 25d | 2006-06-26 | 2006-07-28 |  |  | Bioinformatics; Mark |
| 92 | Document CDE extension | 5d | 2006-06-26 | 2006-06-30 |  |  | Mark |
| 93 | Extend model | 5d | 2006-07-03 | 2006-07-07 | 92 |  | Mark |
| 94 | Apply model to tool | 5d | 2006-07-10 | 2006-07-14 | 93 |  | Bioinformatics |
| 95 | Install services | 5d | 2006-07-17 | 2006-07-21 | 94 |  | Bioinformatics |
| 96 | Install tool | 5d | 2006-07-24 | 2006-07-28 | 95 |  | Bioinformatics |
| 97 | **Testing** | 20d | 2006-06-26 | 2006-07-21 |  |  | Patrick; Mark |
| 98 | Draft testing report | 20d | 2006-06-26 | 2006-07-21 |  |  | Patrick; Mark |
| 99 | **Domain services** | 20d | 2006-06-26 | 2006-07-21 |  |  | Patrick; Mark |
| 100 | Translate use cases into queries | 10d | 2006-06-26 | 2006-07-07 |  |  | Patrick; Mark |
| 101 | Implement base data test | 5d | 2006-07-10 | 2006-07-14 | 104 |  | Patrick; Mark |
| 102 | Implement security test | 5d | 2006-07-17 | 2006-07-21 | 105 |  | Patrick |
| 103 | **Distributed query engine** | 20d | 2006-06-26 | 2006-07-21 |  |  | Patrick; Mark |
| 104 | Translate use cases into queries | 10d | 2006-06-26 | 2006-07-07 |  |  | Patrick; Mark |
| 105 | Implement base data test | 5d | 2006-07-10 | 2006-07-14 | 104 |  | Patrick; Mark |
| 106 | Implement security test | 5d | 2006-07-17 | 2006-07-21 | 105 |  | Patrick |
| 107 | **Graphical user interface** | 15d | 2006-06-26 | 2006-07-14 |  |  | Mark |
| 108 | Perform GUI tests | 15d | 2006-06-26 | 2006-07-14 |  |  | Mark |
| 109 | **Construction** | 40d | 2006-08-09 | 2006-10-03 | 17 |  |  |
| 110 | **Iteration 1** | 20d | 2006-08-09 | 2006-09-05 |  |  |  |
| 111 | Final dataset document (draft) | 20d | 2006-08-09 | 2006-09-05 |  |  |  |
| 112 | **Dataset preparation** | 10d | 2006-08-09 | 2006-08-22 |  |  |  |
| 113 | **Construct demo datasets** | 10d | 2006-08-09 | 2006-08-22 |  |  | Mark |
| 114 | Construct pathology dataset | 5d | 2006-08-09 | 2006-08-15 |  |  | Mark |
| 115 | Construct clinical dataset | 5d | 2006-08-16 | 2006-08-22 | 114 |  | Mark |
| 116 | **Testing** | 20d | 2006-08-09 | 2006-09-05 |  |  | Patrick; Mark |
| 117 | **Domain services** | 20d | 2006-08-09 | 2006-09-05 |  |  | Patrick; Mark |
| 118 | Implement metadata test | 5d | 2006-08-09 | 2006-08-15 |  |  | Patrick |
| 119 | Implement data test | 20d | 2006-08-09 | 2006-09-05 |  |  | Mark |
| 120 | **Distributed query engine** | 20d | 2006-08-09 | 2006-09-05 |  |  | Patrick; Mark |
| 121 | Implement metadata test | 5d | 2006-08-09 | 2006-08-15 |  |  | Patrick |
| 122 | Implement data test | 20d | 2006-08-09 | 2006-09-05 |  |  | Mark |
| 123 | **Graphical user interface** | 15d | 2006-08-09 | 2006-08-29 |  |  | Mark |
| 124 | Perform GUI tests | 15d | 2006-08-09 | 2006-08-29 |  |  | Mark |
| 125 | **Iteration 2** | 20d | 2006-09-06 | 2006-10-03 | 110 |  |  |
| 126 | Final dataset document (final) | 15d | 2006-09-06 | 2006-09-26 |  |  |  |
| 127 | **Dataset preparation** | 10d | 2006-09-06 | 2006-09-19 |  |  |  |
| 128 | **Construct demo datasets** | 10d | 2006-09-06 | 2006-09-19 |  |  | Mark |
| 129 | Construct tissue bank dataset | 5d | 2006-09-06 | 2006-09-12 |  |  | Mark |
| 130 | Construct basic science dataset | 5d | 2006-09-13 | 2006-09-19 | 129 |  | Mark |
| 131 | **Testing** | 20d | 2006-09-06 | 2006-10-03 |  |  |  |
| 132 | **Domain services** | 20d | 2006-09-06 | 2006-10-03 |  |  | Mark |
| 133 | Final testing report | 20d | 2006-09-06 | 2006-10-03 |  |  | Mark |
| 134 | **Distributed query engine** | 20d | 2006-09-06 | 2006-10-03 |  |  | Mark |
| 135 | Final testing report | 20d | 2006-09-06 | 2006-10-03 |  |  | Mark |
| 136 | **Graphical user interface** | 20d | 2006-09-06 | 2006-10-03 |  |  | Mark |
| 137 | Final testing report | 20d | 2006-09-06 | 2006-10-03 |  |  | Mark |
| 138 | **Transition** | 10d | 2006-10-04 | 2006-10-17 | 109 |  |  |
| 139 | Final testing | 10d | 2006-10-04 | 2006-10-17 |  |  |  |
| 140 | Final documentation | 10d | 2006-10-04 | 2006-10-17 |  |  |  |

Removed: 18 Use case definition; 20 Help draft use case document; 21 Help draft requirements and sepcifications; 80 Define queries for use cases; 81 Write unit tests for use cases

Changed:

| ID | Task | Start | Finish | Duration | Total float | Predecessors | Other |
| --- | --- | --- | --- | --- | --- | --- | --- |
| 2 | **Inception** |  | 2006-06-01 → 2006-06-02 (+1d) | 24d → 25d | 109d → 11d |  | was named Management |
| 3 | Install MS Project Server |  | 2006-05-12 → 2006-06-02 (+21d) | 10d → 25d | 123d → 11d |  | was named Install MS Project |
| 4 | Draft project management plan | 2006-05-03 → 2006-05-01 (-2d) | 2006-06-01 → 2006-06-02 (+1d) | 22d → 25d | 109d → 11d |  | constraint finish no earlier than 2006-06-01 → none |
| 5 | Draft communications plan | 2006-05-18 → 2006-05-01 (-17d) | 2006-06-01 → 2006-06-02 (+1d) | 11d → 25d | 109d → 11d |  | constraint finish no earlier than 2006-06-01 → none |
| 6 | Draft risk management matrix | 2006-05-18 → 2006-05-01 (-17d) | 2006-06-01 → 2006-06-02 (+1d) | 11d → 25d | 109d → 11d |  | constraint finish no earlier than 2006-06-01 → none |
| 7 | Draft test plan | 2006-05-18 → 2006-05-01 (-17d) | 2006-06-01 → 2006-06-02 (+1d) | 11d → 25d | 109d → 11d |  | constraint finish no earlier than 2006-06-01 → none |
| 8 | Setup GForge | 2006-05-08 → 2006-05-01 (-7d) | 2006-05-08 → 2006-05-12 (+4d) | 1d → 10d | 122d → 5d |  | constraint start no earlier than 2006-05-08 → none |
| 9 | Setup development environment | 2006-05-09 → 2006-05-15 (+6d) | 2006-05-15 → 2006-05-26 (+11d) | 5d → 10d | 122d → 5d |  | constraint finish no earlier than 2006-05-15 → none |
| 20 | Define problem scenarios | 2006-05-24 → 2006-06-05 (+12d) | 2006-05-25 → 2006-06-06 (+12d) |  | 47d → 33d |  |  |
| 27 | **Dataset preparation** | 2006-05-26 → 2006-06-05 (+10d) | 2006-06-19 → 2006-07-11 (+22d) | 17d → 27d | 47d → 11d | 20 → none | resources none → Raj; Bob; Mark; Patrick |
| 28 | **Dataset acquisition** | 2006-05-26 → 2006-06-05 (+10d) | 2006-06-05 → 2006-06-13 (+8d) |  | 47d → 11d |  |  |
| 29 | Determine available datasets | 2006-05-26 → 2006-06-05 (+10d) | 2006-05-26 → 2006-06-05 (+10d) |  | 47d → 3d |  |  |
| 30 | Match datasets to use cases | 2006-05-29 → 2006-06-06 (+8d) | 2006-05-29 → 2006-06-06 (+8d) |  | 47d → 3d |  |  |
| 31 | Fill out IRB forms | 2006-05-30 → 2006-06-07 (+8d) | 2006-06-05 → 2006-06-13 (+8d) |  | 47d → 3d |  |  |
| 32 | **Pathology dataset** | 2006-06-06 → 2006-06-14 (+8d) | 2006-06-19 → 2006-07-11 (+22d) | 10d → 20d | 47d → 11d |  | resources Wilma → Mark |
| 33 | Document CDE usage | 2006-06-06 → 2006-06-14 (+8d) | 2006-06-12 → 2006-06-20 (+8d) |  | 52d → 3d |  | resources Wilma → Mark |
| 34 | Dataset deidentification | 2006-06-06 → 2006-06-21 (+15d) | 2006-06-19 → 2006-07-04 (+15d) |  | 47d → 3d | none → 33 | resources Wilma → Mark |
| 35 | Expose database | 2006-06-06 → 2006-07-05 (+29d) | 2006-06-12 → 2006-07-11 (+29d) |  | 52d → 3d | none → 34 | resources Wilma → Mark |
| 36 | **Clinical dataset** | 2006-06-06 → 2006-06-14 (+8d) | 2006-06-19 → 2006-07-11 (+22d) | 10d → 20d | 47d → 11d |  | resources Wilma → Mark |
| 37 | CDE document | 2006-06-06 → 2006-06-14 (+8d) | 2006-06-12 → 2006-06-20 (+8d) |  | 52d → 3d |  | resources Wilma → Mark |
| 38 | Dataset deidentification | 2006-06-06 → 2006-06-21 (+15d) | 2006-06-19 → 2006-07-04 (+15d) |  | 47d → 3d | none → 37 | resources Wilma → Mark |
| 39 | Expose database | 2006-06-06 → 2006-07-05 (+29d) | 2006-06-12 → 2006-07-11 (+29d) |  | 52d → 3d | none → 38 | resources Wilma → Mark |
| 40 | **Tool installation** | 2006-06-20 → 2006-06-05 (-15d) | 2006-08-28 → 2006-07-07 (-52d) | 50d → 25d | 47d → 38d | 27 → none | resources none → Bioinformatics; Mark |
| 41 | **Pathology dataset** | 2006-06-20 → 2006-06-05 (-15d) | 2006-08-28 → 2006-07-07 (-52d) | 50d → 25d | 47d → 38d |  | resources none → Bioinformatics; Mark |
| 42 | Document CDE extension | 2006-06-20 → 2006-06-05 (-15d) | 2006-07-03 → 2006-06-09 (-24d) | 10d → 5d | 47d → 5d |  | resources Wilma → Mark |
| 43 | Extend model | 2006-07-04 → 2006-06-12 (-22d) | 2006-07-17 → 2006-06-16 (-31d) | 10d → 5d | 47d → 5d |  | resources Wilma → Mark |
| 44 | Apply model to tool | 2006-07-18 → 2006-06-19 (-29d) | 2006-07-31 → 2006-06-23 (-38d) | 10d → 5d | 47d → 5d |  |  |
| 45 | Install services | 2006-08-01 → 2006-06-26 (-36d) | 2006-08-14 → 2006-06-30 (-45d) | 10d → 5d | 47d → 5d |  |  |
| 46 | Install tool | 2006-08-15 → 2006-07-03 (-43d) | 2006-08-28 → 2006-07-07 (-52d) | 10d → 5d | 47d → 5d |  |  |
| 47 | **Clinical dataset** | 2006-06-20 → 2006-06-05 (-15d) | 2006-08-28 → 2006-07-07 (-52d) | 50d → 25d | 47d → 38d |  | resources none → Bioinformatics; Mark |
| 48 | Document CDE extension | 2006-06-20 → 2006-06-05 (-15d) | 2006-07-03 → 2006-06-09 (-24d) | 10d → 5d | 47d → 5d |  | resources Wilma → Mark |
| 49 | Extend model | 2006-07-04 → 2006-06-12 (-22d) | 2006-07-17 → 2006-06-16 (-31d) | 10d → 5d | 47d → 5d |  | resources Wilma → Mark |
| 50 | Apply model to tool | 2006-07-18 → 2006-06-19 (-29d) | 2006-07-31 → 2006-06-23 (-38d) | 10d → 5d | 47d → 5d |  |  |
| 51 | Install services | 2006-08-01 → 2006-06-26 (-36d) | 2006-08-14 → 2006-06-30 (-45d) | 10d → 5d | 47d → 5d |  |  |
| 52 | Install tool | 2006-08-15 → 2006-07-03 (-43d) | 2006-08-28 → 2006-07-07 (-52d) | 10d → 5d | 47d → 5d |  |  |
| 53 | **Testing** | 2006-05-26 → 2006-06-05 (+10d) | 2006-07-06 → 2006-06-23 (-13d) | 30d → 15d | 84d → 48d |  | resources none → Patrick; Mark |
| 76 | **Tissue bank dataset** | 2006-06-06 → 2006-07-12 (+36d) | 2006-06-19 → 2006-08-08 (+50d) | 10d → 20d | 47d → 11d |  | resources Wilma → Mark |
| 77 | CDE document | 2006-06-06 → 2006-07-12 (+36d) | 2006-06-12 → 2006-07-18 (+36d) |  | 52d → 11d |  | resources Wilma → Mark |
| 78 | Dataset deidentification | 2006-06-06 → 2006-07-19 (+43d) | 2006-06-19 → 2006-08-01 (+43d) |  | 47d → 11d | none → 77 | resources Wilma → Mark |
| 79 | Expose database | 2006-06-06 → 2006-08-02 (+57d) | 2006-06-12 → 2006-08-08 (+57d) |  | 52d → 11d | none → 78 | resources Wilma → Mark |
| 85 | **Tissue bank dataset** | 2006-06-20 → 2006-06-26 (+6d) | 2006-08-28 → 2006-07-28 (-31d) | 50d → 25d | 47d → 18d |  | resources none → Bioinformatics; Mark |
| 86 | Document CDE extension | 2006-06-20 → 2006-06-26 (+6d) | 2006-07-03 → 2006-06-30 (-3d) | 10d → 5d | 47d → 18d |  | resources Wilma → Mark |
| 87 | Extend model | 2006-07-04 → 2006-07-03 (-1d) | 2006-07-17 → 2006-07-07 (-10d) | 10d → 5d | 47d → 18d |  | resources Wilma → Mark |
| 88 | Apply model to tool | 2006-07-18 → 2006-07-10 (-8d) | 2006-07-31 → 2006-07-14 (-17d) | 10d → 5d | 47d → 18d |  |  |
| 89 | Install services | 2006-08-01 → 2006-07-17 (-15d) | 2006-08-14 → 2006-07-21 (-24d) | 10d → 5d | 47d → 18d |  |  |
| 90 | Install tool | 2006-08-15 → 2006-07-24 (-22d) | 2006-08-28 → 2006-07-28 (-31d) | 10d → 5d | 47d → 18d |  |  |

## Version 3 (saved 2006-05-30)

Note of the change: added details about Duke databases

Last finish stays 2006-11-01.

Added:

| ID | Task | Duration | Start | Finish | Predecessors | Resources |
| --- | --- | --- | --- | --- | --- | --- |
| 53 | **CAE** | 25d | 2006-06-05 | 2006-07-07 |  |  |
| 54 | Document CDE extension | 5d | 2006-06-05 | 2006-06-09 |  | Mark |
| 55 | Extend model | 5d | 2006-06-12 | 2006-06-16 | 54 | Mark |
| 56 | Apply model to tool | 5d | 2006-06-19 | 2006-06-23 | 55 | Bioinformatics |
| 57 | Install services | 5d | 2006-06-26 | 2006-06-30 | 56 | Bioinformatics |
| 58 | Install tool | 5d | 2006-07-03 | 2006-07-07 | 57 | Bioinformatics |
| 61 | Implement setup/tear down of services | 5d | 2006-06-05 | 2006-06-09 |  | Patrick |

Changed:

| ID | Task | Start | Finish | Duration | Total float | Other |
| --- | --- | --- | --- | --- | --- | --- |
| 32 | **MAW3** |  | 2006-07-11 → 2006-06-30 (-11d) | 20d → 12.5d | 11d → 18.5d | was named Pathology dataset |
| 33 | Document CDE usage |  | 2006-06-20 → 2006-06-16 (-4d) | 5d → 2.5d | 3d → 18.5d | resources Mark → Mark; Chris |
| 34 | Dataset deidentification | 2006-06-21 → 2006-06-16 (-5d) | 2006-07-04 → 2006-06-23 (-11d) | 10d → 5d | 3d → 18.5d | resources Mark → Mark; Chris |
| 35 | Expose database | 2006-07-05 → 2006-06-23 (-12d) | 2006-07-11 → 2006-06-30 (-11d) |  | 3d → 18.5d | resources Mark → Mark.Chris |
| 36 | **DSR** |  |  |  |  | was named Clinical dataset |
| 41 | **caTissue Core** |  |  |  | 38d → 33d | was named Pathology dataset |
| 47 | **CTOM** |  |  |  | 38d → 33d | was named Clinical dataset |
| 59 | **System testing** |  |  |  | 48d → 43d | was named Testing |
| 68 | **Graphical user interface** |  | 2006-06-16 → 2006-06-09 (-7d) | 10d → 5d |  | resources Mark → Mark; Patrick |
| 69 | Create draft QA test plan |  | 2006-06-16 → 2006-06-09 (-7d) | 10d → 5d | 20d → 53d | was named Create detailed GUI test plan; resources Mark → Mark; Patrick |
| 83 | **Tumor registry** |  |  |  |  | was named Tissue bank dataset |
| 87 | **GEMS Illumina** |  |  |  |  | was named Basic science dataset |
| 92 | **caTIES** |  |  |  |  | was named Tissue bank dataset |
| 98 | **caIntegrator** |  |  |  |  | was named Basic science dataset |
| 115 | Final QA test plan |  |  |  |  | was named Perform GUI tests |
| 121 | Construct MAW3 dataset |  |  |  |  | was named Construct pathology dataset |
| 122 | Construct DSR dataset |  |  |  |  | was named Construct clinical dataset |
| 130 | **Graphical user interface** |  | 2006-08-29 → 2006-08-18 (-11d) | 15d → 7.5d | 16d → 23.5d | resources Mark → Mark; domain expert |
| 131 | Perform QA tests |  | 2006-08-29 → 2006-08-18 (-11d) | 15d → 7.5d | 16d → 23.5d | was named Perform GUI tests; resources Mark → Mark; domain expert |
| 136 | Construct tumor registry dataset |  |  |  |  | was named Construct tissue bank dataset |
| 137 | Construct GEMS Illumina dataset |  |  |  |  | was named Construct basic science dataset |

## Version 4 (saved 2006-05-31)

Note of the change: some changes of some sort

Last finish stays 2006-11-01.

Changed:

| ID | Task | Start | Finish | Total float |
| --- | --- | --- | --- | --- |
| 53 | **caTIES** | 2006-06-26 → 2006-06-05 (-21d) | 2006-07-28 → 2006-07-07 (-21d) | 18d → 33d |
| 98 | **CTOM** | 2006-06-05 → 2006-06-26 (+21d) | 2006-07-07 → 2006-07-28 (+21d) | 33d → 18d |
